# CSM 3.2

How a schedule from MS Project changed from version to version. A marks actual dates.

## Version 1 (saved 2006-07-26, file Baselined Project Plan_CSM_v3.2.mpp)

Note of the change: *** empty log message ***

| ID | WBS | Task | Duration | Start | Finish | Predecessors | Complete | Total float | Constraint |
| --- | --- | --- | --- | --- | --- | --- | --- | --- | --- |
| 1 | 1 | **CSM 3.2** | 173d? | 2006-04-20 A | 2006-12-22 |  | 32% | 0d |  |
| 2 | 1.1 | **Elaboration** | 55.95d? | 2006-04-20 A | 2006-07-07 |  | 87% | 117.05d |  |
| 3 | 1.1.1 | **Iteration 1** | 34d? | 2006-04-20 A | 2006-06-07 |  | 75% | 139d |  |
| 4 |  | Kick off | 0d | 2006-04-20 A | 2006-04-20 A |  | 100% |  | start no earlier than 2006-04-20 |
| 5 | 1.1.1.2 | **21 CFR Part 11** | 34d | 2006-04-20 A | 2006-06-07 |  | 35% | 139d |  |
| 6 |  | Preperation | 7d | 2006-04-20 A | 2006-04-28 A |  | 100% |  |  |
| 7 |  | Kickoff Meeting With Biopharm | 0d | 2006-05-01 A | 2006-05-01 A |  | 100% |  | start no earlier than 2006-05-01 |
| 8 |  | Biopharm resources allocated | 0d | 2006-05-15 | 2006-05-15 |  |  | 149.65d | start no earlier than 2006-05-15 |
| 9 |  | Deliver Materials | 3d | 2006-05-17 | 2006-05-19 | 8FS+2d |  | 149.65d |  |
| 10 |  | Provide Validation Support | 10d | 2006-05-22 | 2006-06-07 | 9 |  | 147.65d |  |
| 11 | 1.1.1.3 | **Project Scope** | 20d? | 2006-05-01 A | 2006-05-26 |  | 88% | 146d |  |
| 12 |  | Create/Revise Candidate Requirements Document | 4d | 2006-05-01 A | 2006-05-04 A | 6 | 100% |  |  |
| 13 |  | Revised Scope w/Product Manager | 0d | 2006-05-04 A | 2006-05-04 A |  | 100% |  |  |
| 14 |  | Define Elaboration Task Plan | 1d? | 2006-05-05 A | 2006-05-05 A | 12 | 100% |  |  |
| 15 |  | Create/Update Scope Document | 15d | 2006-05-08 A | 2006-05-26 A | 14 | 100% |  |  |
| 16 |  | Obtain Changes/Fixes from BMS and map to current scope | 4d | 2006-05-15 A | 2006-05-18 A |  | 100% |  | start no earlier than 2006-05-15 |
| 17 | 1.1.1.3.6 | **LOE/Requirements Gathering** | 14d | 2006-05-08 A | 2006-05-25 | 14 | 77% | 147d |  |
| 18 |  | Obtain exact JDK version for next release | 0.25d | 2006-05-08 A | 2006-05-08 A |  | 100% |  |  |
| 19 |  | High Level Diagram of Grid-CSM Integration | 2d | 2006-05-08 A | 2006-05-10 A | 18 | 100% |  |  |
| 20 |  | High Level Diagram of CSM Web Service | 1d | 2006-05-10 A | 2006-05-11 A | 19 | 100% |  |  |
| 21 |  | Deliver Diagrams to Avinash | 0d | 2006-05-11 A | 2006-05-11 A | 20 | 100% |  |  |
| 22 |  | IMF Presentation | 2d | 2006-05-11 A | 2006-05-15 A | 21 | 100% |  |  |
| 23 |  | Estimate Tying User to Application | 1d | 2006-05-15 A | 2006-05-16 A | 22 | 100% |  |  |
| 24 |  | Estimate for Grid Integration/ Project Scope Doc | 6d | 2006-05-16 | 2006-05-24 | 23 |  | 157.4d |  |
| 25 |  | Meet with Apps for Performance Requirements | 0.25d | 2006-05-11 A | 2006-05-11 A |  | 100% |  | start no earlier than 2006-05-11 |
| 26 |  | Prototyp Generic LDAP | 2.5d | 2006-05-08 A | 2006-05-10 A |  | 100% |  |  |
| 27 |  | Estimate Auth Policy Caching | 3d | 2006-05-10 A | 2006-05-15 A | 26 | 100% |  |  |
| 28 |  | Estimate CLM Logging to text file and Log Viewer Mods | 2d | 2006-05-15 A | 2006-05-17 A | 27 | 100% |  |  |
| 29 |  | Estimate BMS Webservice Integration | 2.5d | 2006-05-17 A | 2006-05-19 A | 28 | 100% |  |  |
| 30 |  | Estimate BMS Integration Work | 4d | 2006-05-22 A | 2006-05-25 A | 29 | 100% |  |  |
| 31 |  | NCICB Management Review Complete | 0d | 2006-05-17 A | 2006-05-17 A |  | 100% |  | start no earlier than 2006-05-17 |
| 32 |  | Update Scope | 2.95d | 2006-05-26 A | 2006-05-31 A | 17 | 100% |  |  |
| 33 |  | User Feedback Sessions Complete | 0d | 2006-05-26 A | 2006-05-26 A |  | 100% |  | start no earlier than 2006-05-26 |
| 34 |  | Revise Task Plan | 2d | 2006-05-31 A | 2006-06-02 A | 32 | 100% |  |  |
| 35 | 1.1.2 | **Iteration 2** | 22.95d | 2006-05-19 A | 2006-06-21 A |  | 100% |  |  |
| 36 | 1.1.2.1 | **Detail Requirements** | 18.95d | 2006-05-19 A | 2006-06-15 A |  | 100% |  |  |
| 37 | 1.1.2.1.1 | **Define Use Cases** | 18.95d | 2006-05-19 A | 2006-06-15 A |  | 100% |  |  |
| 38 | 1.1.2.1.1.1 | **UPT** | 10.5d | 2006-05-19 A | 2006-06-05 A |  | 100% |  |  |
| 39 |  | Write Initial Draft 30% | 1.5d | 2006-05-19 A | 2006-05-22 A | 16 | 100% |  |  |
| 40 |  | Write Internal Review 60 % | 1.5d | 2006-05-22 A | 2006-05-23 A | 39 | 100% |  |  |
| 41 |  | Write Final Complete 100% | 2d | 2006-05-24 A | 2006-05-25 A | 40 | 100% |  |  |
| 42 |  | Review | 1d | 2006-05-26 A | 2006-05-31 A | 41 | 100% |  |  |
| 43 |  | Update per Review | 3d | 2006-05-31 A | 2006-06-05 A | 42 | 100% |  |  |
| 44 | 1.1.2.1.1.2 | **Web Service** | 7d | 2006-05-31 A | 2006-06-09 A |  | 100% |  |  |
| 45 |  | Write Internal Review 60% | 5d | 2006-05-31 A | 2006-06-07 A | 32 | 100% |  |  |
| 46 |  | Write Final Complete 100% | 1d | 2006-06-07 A | 2006-06-08 A | 45 | 100% |  |  |
| 47 |  | Review | 0.25d | 2006-06-08 A | 2006-06-09 A | 46 | 100% |  |  |
| 48 |  | Update per Review | 0.75d | 2006-06-09 A | 2006-06-09 A | 47 | 100% |  |  |
| 49 | 1.1.2.1.1.3 | **CSM APIs** | 7.5d | 2006-05-31 A | 2006-06-12 A |  | 100% |  |  |
| 50 |  | Write Initial Draft 30% | 2.5d | 2006-05-31 A | 2006-06-05 A | 32 | 100% |  |  |
| 51 |  | Write Internal Review 60 % | 2d | 2006-06-05 A | 2006-06-07 A | 50 | 100% |  |  |
| 52 |  | Write Final Complete 100% | 2d | 2006-06-07 A | 2006-06-09 A | 51 | 100% |  |  |
| 53 |  | Review | 0.25d | 2006-06-09 A | 2006-06-09 A | 52 | 100% |  |  |
| 54 |  | Update per Review | 0.75d | 2006-06-09 A | 2006-06-12 A | 53 | 100% |  |  |
| 55 | 1.1.2.1.1.4 | **- Performance Enhancements** | 4d | 2006-06-09 A | 2006-06-15 A |  | 100% |  |  |
| 56 |  | Write Internal Review 60% | 2d | 2006-06-09 A | 2006-06-13 A | 44 | 100% |  |  |
| 57 |  | Write Final Complete 100% | 1d | 2006-06-13 A | 2006-06-14 A | 56 | 100% |  |  |
| 58 |  | Review | 0.25d | 2006-06-14 A | 2006-06-15 A | 57 | 100% |  |  |
| 59 |  | Update per Review | 0.75d | 2006-06-15 A | 2006-06-15 A | 58 | 100% |  |  |
| 60 |  | Revise Scope Document | 1d | 2006-06-14 A | 2006-06-15 A | 36FS-1d | 100% |  |  |
| 61 |  | Revised Scope Document Complete | 0d | 2006-06-13 A | 2006-06-13 A |  | 100% |  | start no earlier than 2006-06-13 |
| 62 |  | Revise Task Plan | 4d | 2006-06-15 A | 2006-06-21 A | 60 | 100% |  |  |
| 63 |  | Revised PM Project Plan Submitted | 0d | 2006-06-19 A | 2006-06-19 A |  | 100% |  | start no earlier than 2006-06-19 |
| 64 | 1.1.3 | **Iteration 3** | 19.5d | 2006-06-12 A | 2006-07-07 |  | 96% | 117.05d |  |
| 65 | 1.1.3.1 | **Test Plan** | 16d | 2006-06-15 A | 2006-07-07 |  | 88% | 117.05d |  |
| 66 |  | Review Testability of Requirements | 4d | 2006-06-15 A | 2006-06-21 A | 59 | 100% |  |  |
| 67 |  | Test Plan Development Intial Template Draft | 2d | 2006-06-21 A | 2006-06-23 A | 66 | 100% |  |  |
| 68 |  | Test Plan Development 80% Completion | 6d | 2006-06-23 A | 2006-07-03 A | 67 | 100% |  |  |
| 69 |  | Test Plan Development Internal Review 100% Completion | 2d | 2006-07-03 A | 2006-07-05 A | 68 | 100% |  |  |
| 70 |  | Test Plan Development Rework | 2d | 2006-07-05 | 2006-07-07 | 69 |  | 125.7d |  |

| ID | WBS | Task | Duration | Start | Finish | Predecessors | Complete | Total float | Constraint |
| --- | --- | --- | --- | --- | --- | --- | --- | --- | --- |
| 71 | 1.1.3.2 | **Design** | 12.55d | 2006-06-12 A | 2006-06-28 A |  | 100% |  |  |
| 72 | 1.1.3.2.1 | **Create General Design Document** | 5d | 2006-06-12 A | 2006-06-19 A | 49 | 100% |  |  |
| 73 |  | Review Draft at 50% | 2.5d | 2006-06-12 A | 2006-06-14 A |  | 100% |  |  |
| 74 |  | Complete Draft/Final Review | 2.5d | 2006-06-14 A | 2006-06-19 A | 73 | 100% |  |  |
| 75 |  | General Design Doc Posted for Review | 0d | 2006-06-19 A | 2006-06-19 A |  | 100% |  | start no earlier than 2006-06-19 |
| 76 | 1.1.3.2.3 | **Performance** | 5d | 2006-06-19 A | 2006-06-23 A | 75 | 100% |  |  |
| 77 |  | Performance Design Peparation | 3.5d | 2006-06-19 A | 2006-06-22 A | 55 | 100% |  |  |
| 78 |  | Performance Design Internal Review | 0.5d | 2006-06-22 A | 2006-06-22 A | 77 | 100% |  |  |
| 79 |  | Performance Design Rework | 1d | 2006-06-23 A | 2006-06-23 A | 78 | 100% |  |  |
| 80 |  | CSM SAD | 3d | 2006-06-26 A | 2006-06-28 A | 79 | 100% |  |  |
| 81 | 1.1.3.3 | **UML Model** | 8.55d | 2006-06-19 A | 2006-06-30 |  | 99% | 123d |  |
| 82 |  | Update CSM Model | 2d | 2006-06-19 A | 2006-06-21 A | 74 | 100% |  |  |
| 83 |  | Submit For Approval | 0.2d | 2006-06-21 A | 2006-06-21 A | 82 | 100% |  |  |
| 84 |  | UML Model Changes Approved | 0d | 2006-06-30 | 2006-06-30 |  |  | 131.65d | start no earlier than 2006-06-30 |
| 85 | 1.1.3.6 | **Prototype** | 11.35d | 2006-06-21 A | 2006-07-06 A |  | 100% |  |  |
| 86 |  | Auth Caching | 4d | 2006-06-29 A | 2006-07-05 A | 80 | 100% |  |  |
| 87 |  | Auth Caching - Review and Baselining | 1d | 2006-07-06 A | 2006-07-06 A | 86 | 100% |  |  |
| 88 |  | Open/Active Directory LDAP | 4d | 2006-06-28 A | 2006-07-05 A | 91 | 100% |  |  |
| 89 |  | Open/Active Directory LDAP - Code Review and Baselining | 1d | 2006-07-05 A | 2006-07-06 A | 88 | 100% |  |  |
| 90 |  | Schema Support for SQL Server | 4d | 2006-06-21 A | 2006-06-27 A | 83 | 100% |  |  |
| 91 |  | Schema Support for SQL Server - Code Review and Baselining | 1d | 2006-06-27 A | 2006-06-28 A | 90 | 100% |  |  |
| 92 |  | Finalize Scope/Project Plan | 5d | 2006-06-19 A | 2006-06-23 A | 63 | 100% |  |  |
| 93 |  | Final 3.2 Scope/Project Plan to Gforge | 0d | 2006-06-26 A | 2006-06-26 A |  | 100% |  | start no earlier than 2006-06-26 |
| 94 | 1.2 | **Construction** | 109.05d | 2006-06-23 A | 2006-11-28 |  | 7% | 18d |  |
| 95 |  | Production Support | 80d | 2006-07-12 | 2006-11-01 |  |  | 43.65d | start no earlier than 2006-07-12 |
| 96 | 1.2.2 | **Iteration 0.5** | 28.7d | 2006-06-23 A | 2006-08-03 |  | 35% | 98.35d |  |
| 97 | 1.2.2.1 | **Hibernate 3.1 Upgrade/JDK Backwards Compatibility/MySQL Upgrade Test** | 6d | 2006-07-06 A | 2006-07-14 |  | 83% | 112.35d |  |
| 98 |  | Development | 5d | 2006-07-06 A | 2006-07-13 A | 89 | 100% |  |  |
| 99 |  | Regression Testing | 1d | 2006-07-13 | 2006-07-14 | 98 |  | 112.35d |  |
| 100 | 1.2.2.2 | **Open LDAP/Active Directory Authorization** | 4d | 2006-07-14 A | 2006-07-20 |  | 93% | 34.35d |  |
| 101 |  | Design | 1d | 2006-07-14 A | 2006-07-17 A | 99 | 100% |  |  |
| 102 |  | Development/Unit Test | 3d | 2006-07-17 A | 2006-07-20 | 101 | 90% | 34.35d |  |
| 103 | 1.2.2.3 | **Auth Policy Caching** | 6d | 2006-07-07 A | 2006-07-14 |  | 92% | 102d |  |
| 104 |  | Design | 1d | 2006-07-07 A | 2006-07-07 A | 87 | 100% |  |  |
| 105 |  | Development/Unit Testing | 5d | 2006-07-10 A | 2006-07-14 | 104 | 90% | 102d |  |
| 106 | 1.2.2.4 | **Expose Core Authorization Service as Web Service** | 10d | 2006-07-17 | 2006-07-28 |  |  | 102d |  |
| 107 |  | Design | 1d | 2006-07-17 | 2006-07-17 | 105 |  | 102d |  |
| 108 |  | Development | 9d | 2006-07-18 | 2006-07-28 | 107 |  | 102d |  |
| 109 | 1.2.2.4 | **BMS Web Service Integration** | 6d | 2006-07-20 | 2006-07-28 |  |  | 34.35d |  |
| 110 |  | Design | 1d | 2006-07-20 | 2006-07-21 | 102 |  | 34.35d |  |
| 111 |  | Development/Unit Test | 5d | 2006-07-21 | 2006-07-28 | 110 |  | 34.35d |  |
| 112 |  | Components Deployed on Dev Server | 0d | 2006-07-28 | 2006-07-28 | 111 |  | 34.35d |  |
| 113 | 1.2.2.6 | **Regression Test Complete Code Coverage** | 20d | 2006-06-23 A | 2006-07-21 |  | 40% | 101.05d |  |
| 114 |  | Implementation | 13d | 2006-06-23 A | 2006-07-21 | 67 | 40% | 101.05d |  |
| 115 |  | QA Test | 6d | 2006-07-21 | 2006-07-31 | 114 |  | 101.05d |  |
| 116 |  | Testing Support | 4d | 2006-07-28 | 2006-08-03 | 112 |  | 34.35d |  |
| 117 | 1.2.3 | **Iteration 1** | 41d | 2006-08-03 | 2006-10-02 | 116 |  | 34.35d |  |
| 118 | 1.2.3.1 | **Linking a User to Application Context** | 7d | 2006-08-03 | 2006-08-14 |  |  | 34.35d |  |
| 119 |  | Design | 2d | 2006-08-03 | 2006-08-07 | 116 |  | 34.35d |  |
| 120 |  | Development/Unit Test | 5d | 2006-08-07 | 2006-08-14 | 119 |  | 34.35d |  |
| 121 | 1.2.3.2 | **Improve Exception Handling** | 5d | 2006-08-14 | 2006-08-21 |  |  | 34.35d |  |
| 122 |  | Development/Unit Test | 5d | 2006-08-14 | 2006-08-21 | 120 |  | 34.35d |  |
| 123 | 1.2.3.3 | **Performance Enhancements** | 9d | 2006-08-03 | 2006-08-16 |  |  | 34.35d |  |
| 124 | 1.2.3.3.1 | **Fix Update Methods** | 3d | 2006-08-03 | 2006-08-08 |  |  | 34.35d |  |
| 125 |  | Development/Unit Test | 3d | 2006-08-03 | 2006-08-08 | 116 |  | 34.35d |  |
| 126 | 1.2.3.3.2 | **SDK Instance Level Security Design** | 6d | 2006-08-08 | 2006-08-16 |  |  | 34.35d |  |
| 127 |  | Design | 6d | 2006-08-08 | 2006-08-16 | 125 |  | 34.35d |  |
| 128 | 1.2.3.4 | **Grid SAML Assertion Support** | 15d | 2006-08-16 | 2006-09-07 |  |  | 34.35d |  |
| 129 |  | Design | 2d | 2006-08-16 | 2006-08-18 | 126 |  | 34.35d |  |
| 130 |  | Development | 13d | 2006-08-18 | 2006-09-07 | 129 |  | 34.35d |  |
| 131 | 1.2.3.5 | **Design** | 3d | 2006-09-07 | 2006-09-12 |  |  | 34.35d |  |
| 132 |  | Secure SDK Interfaces | 2d | 2006-09-07 | 2006-09-11 | 128 |  | 34.35d |  |
| 133 |  | Add new "Type" attribute to Protection Element | 1d | 2006-09-11 | 2006-09-12 | 132 |  | 34.35d |  |
| 134 | 1.2.3.6 | **BMS Code Integration** | 15d | 2006-08-21 | 2006-09-12 |  |  | 34.35d |  |
| 135 |  | Design | 2d | 2006-08-21 | 2006-08-23 | 122 |  | 34.35d |  |
| 136 |  | Development | 13d | 2006-08-23 | 2006-09-12 | 135 |  | 34.35d |  |
| 137 |  | QA Test Components | 4d | 2006-09-12 | 2006-09-18 | 128, 134 |  | 57.35d |  |
| 138 |  | Test Support | 4d | 2006-09-12 | 2006-09-18 | 131, 134 |  | 34.35d |  |
| 139 |  | Load Test Performance Enhancements/APIs | 10d | 2006-09-18 | 2006-10-02 | 137 |  | 57.35d |  |
| 140 | 1.2.4 | **Iteration 2** | 13d | 2006-09-18 | 2006-10-05 |  |  | 34.35d |  |

| ID | WBS | Task | Duration | Start | Finish | Predecessors | Total float | Constraint |
| --- | --- | --- | --- | --- | --- | --- | --- | --- |
| 141 | 1.2.3.5 | **Secure SDK interfaces** | 10d | 2006-09-18 | 2006-10-02 |  | 34.35d |  |
| 142 |  | Design | 2d | 2006-09-18 | 2006-09-20 | 138 | 34.35d |  |
| 143 |  | Development | 8d | 2006-09-20 | 2006-10-02 | 142 | 34.35d |  |
| 144 | 1.2.3.7 | **Defect Fixes** | 10d | 2006-09-18 | 2006-10-02 |  | 34.35d |  |
| 145 |  | Development/Unit Test | 10d | 2006-09-18 | 2006-10-02 | 138 | 34.35d |  |
| 146 |  | QA Test Components | 3d | 2006-10-02 | 2006-10-05 | 144, 141 | 54.35d |  |
| 147 |  | Test Support | 3d | 2006-10-02 | 2006-10-05 | 144, 141 | 34.35d |  |
| 148 | 1.2.5 | **Iteration 3** | 36.35d | 2006-10-05 | 2006-11-28 |  | 18d |  |
| 149 | 1.2.5.1 | **Add a new "Type" attribute to Protection Element** | 4d | 2006-10-05 | 2006-10-11 |  | 34.35d |  |
| 150 |  | Design | 1d | 2006-10-05 | 2006-10-06 | 147 | 34.35d |  |
| 151 |  | Development | 3d | 2006-10-06 | 2006-10-11 | 150 | 34.35d |  |
| 152 | 1.2.3.7 | **Defect Fixes** | 8d | 2006-10-05 | 2006-10-17 |  | 34.35d |  |
| 153 |  | Development/Unit Test | 5d | 2006-10-05 | 2006-10-12 | 147 | 37.35d |  |
| 154 |  | Improve the Deployment of CSM & Integration with Other Apps | 4d | 2006-10-11 | 2006-10-17 | 149 | 34.35d |  |
| 155 |  | Begin Documentation Draft | 3d | 2006-10-12 | 2006-10-17 | 153 | 43.35d |  |
| 156 | 1.2.3.9 | **Testing** | 3d | 2006-10-17 | 2006-10-20 |  | 34.35d |  |
| 157 |  | QA Test Components | 3d | 2006-10-17 | 2006-10-20 | 152, 155 | 43.35d |  |
| 158 |  | Test Support | 3d | 2006-10-17 | 2006-10-20 | 152 | 34.35d |  |
| 159 | 1.2.5.5 | **Documentation** | 5d | 2006-10-20 | 2006-10-27 |  | 7.35d |  |
| 160 |  | Write Draft Documentation/ Update User Guide | 5d | 2006-10-20 | 2006-10-27 | 158 | 34.35d |  |
| 161 |  | Draft Documentation/User Documentation Completed | 0d | 2006-10-27 | 2006-10-27 |  | 3d | start no earlier than 2006-10-27 |
| 162 |  | Internal System Testing Complete (QA Tier) | 0d | 2006-11-01 | 2006-11-01 |  | 36d | start no earlier than 2006-11-01 |
| 163 |  | Push Candidate to Staging | 4d | 2006-10-27 | 2006-11-02 | 160 | 34.35d |  |
| 164 |  | Release Candidate pushed to Stage Tier | 0d | 2006-11-03 | 2006-11-03 |  | 19d | start no earlier than 2006-11-03 |
| 165 | 1.2.5.9 | **Regression Testing** | 5d | 2006-11-03 | 2006-11-09 |  | 19d |  |
| 166 |  | Execution | 5d | 2006-11-03 | 2006-11-09 | 164 | 19d |  |
| 167 |  | Test Support | 5d | 2006-11-03 | 2006-11-09 | 164 | 19d |  |
| 168 | 1.2.5.10 | **UAT Testing/Load Testing** | 10d | 2006-11-10 | 2006-11-24 |  | 19d |  |
| 169 |  | Test Execution/Suppport | 10d | 2006-11-10 | 2006-11-24 | 165 | 19d |  |
| 170 |  | UAT Complete | 0d | 2006-11-28 | 2006-11-28 |  | 18d | start no earlier than 2006-11-28 |
| 171 | 1.3 | **Transition** | 39d | 2006-10-27 | 2006-12-22 |  | 0d |  |
| 172 | 1.3.1 | **Documentation** | 35d | 2006-10-27 | 2006-12-15 |  | 3d |  |
| 173 |  | Review Technical/User Docs | 11d | 2006-10-27 | 2006-11-10 | 161 | 3d |  |
| 174 |  | Review Technical/User Docs Complete | 0d | 2006-11-10 | 2006-11-10 |  | 29d | start no earlier than 2006-11-10 |
| 175 |  | Incorporate Comments to User Docs | 10d | 2006-11-13 | 2006-11-27 | 173 | 3d |  |
| 176 |  | Incorporate Comments to User Docs Complete | 0d | 2006-11-28 | 2006-11-28 |  | 18d | start no earlier than 2006-11-28 |
| 177 |  | Finalize Documents | 14d | 2006-11-28 | 2006-12-15 | 175 | 4d |  |
| 178 |  | Final Version of User Documents Complete | 0d | 2006-12-15 | 2006-12-15 |  | 5d | start no earlier than 2006-12-15 |
| 179 |  | Staging | 15d | 2006-11-28 | 2006-12-18 | 175 | 3d |  |
| 180 |  | Internal Staging Complete | 0d | 2006-12-19 | 2006-12-19 |  | 3d | start no earlier than 2006-12-19 |
| 181 |  | Push to Production | 0d | 2006-12-21 | 2006-12-21 |  | 1d | start no earlier than 2006-12-21 |
| 182 |  | Go Live | 0d | 2006-12-22 | 2006-12-22 |  | 0d | start no earlier than 2006-12-22 |

## Version 2 (saved 2006-11-01, file Project Plan_CSM_v3.2.mpp)

Note of the change: *** empty log message ***

Last finish 2006-12-22 → 2006-12-28 (+6d). Complete tasks 70 → 119.

Added:

| ID | Task | Duration | Start | Finish | Predecessors | Constraint | Resources |
| --- | --- | --- | --- | --- | --- | --- | --- |
| 94 | **Iteration 4** | 6d | 2006-07-25 A | 2006-08-01 A |  |  |  |
| 95 | **CLM** | 6d | 2006-07-25 A | 2006-08-01 A |  |  |  |
| 96 | Develop Requirements and Use Cases | 3d | 2006-07-25 A | 2006-07-27 A |  | start no earlier than 2006-07-25 | Vijay |
| 97 | Develop General Design | 3d | 2006-07-28 A | 2006-08-01 A | 96 |  | Vijay |
| 122 | **NCICB Boot Camp Support** | 3d | 2006-08-04 A | 2006-08-08 A |  |  |  |
| 123 | Preparation/Presentation | 3d | 2006-08-04 A | 2006-08-08 A | 120 |  | Kunal |
| 124 | Presentation Support | 0.5d | 2006-08-04 A | 2006-08-04 A | 120 |  | Orlando |
| 126 | Exception Handling | 2d | 2006-08-04 A | 2006-08-10 A |  |  | Kunal |
| 127 | BMS Code Integration | 2d | 2006-08-28 A | 2006-08-29 A | 126 |  | Vijay |
| 128 | Grid SAML Assertion Support | 2d | 2006-08-11 A | 2006-08-14 A | 126 |  | Kunal |
| 133 | **Add new Type attribute to Protection Element** | 5d | 2006-09-07 A | 2006-09-13 A |  |  |  |
| 137 | Development | 10d | 2006-08-30 A | 2006-09-13 A | 127 |  | Vijay |
| 138 | **CLM** | 45d | 2006-08-01 A | 2006-10-03 A |  |  |  |
| 139 | **Query Interface** | 14d | 2006-08-01 A | 2006-08-18 A |  |  |  |
| 140 | Design (All Query API changes) | 2d | 2006-08-01 A | 2006-08-02 A |  | finish no earlier than 2006-08-02 | Vijay |
| 141 | Create Object Model - Semantic Integration | 4d | 2006-08-03 A | 2006-08-08 A | 140 |  | Vijay |
| 142 | Development | 8d | 2006-08-09 A | 2006-08-18 A | 141 | start no earlier than 2006-08-03 | Vijay |
| 143 | **Use NCI Template** | 5d | 2006-08-21 A | 2006-08-25 A |  |  |  |
| 145 | Development | 4d | 2006-08-22 A | 2006-08-25 A | 144 | start no earlier than 2006-08-22 | Vijay |
| 146 | **Limit view by Organization, Object ID, Object Name** | 10d | 2006-09-18 A | 2006-09-29 A |  |  |  |
| 148 | Development | 9d | 2006-09-19 A | 2006-09-29 A | 147 | start no earlier than 2006-08-16 | Kunal |
| 149 | **Retreive Log Messages based on Object's Primary Key (Unique Key)** | 12d | 2006-09-14 A | 2006-09-29 A |  |  |  |
| 150 | Development | 12d | 2006-09-14 A | 2006-09-29 A | 151 |  | Vijay |
| 151 | **Refactor Log Viewer to use Query API's to retrieve the results** | 4d | 2006-09-08 A | 2006-09-13 A |  |  |  |
| 153 | Development | 3d | 2006-09-11 A | 2006-09-13 A | 152 | start no earlier than 2006-08-22 | Vijay |
| 154 | **Utilize CSM for authentication/authorization** | 10d | 2006-09-01 A | 2006-09-15 A |  |  |  |
| 156 | **Testing Integration** | 2d | 2006-10-02 A | 2006-10-03 A |  |  |  |
| 157 | Execution | 2d | 2006-10-02 A | 2006-10-03 A | 149, 146 | start no earlier than 2006-09-08 | Vijay; Kunal |
| 159 | CSM | 4d | 2006-09-01 A | 2006-09-07 A | 131 |  | QA |
| 160 | CLM | 7d | 2006-10-04 A | 2006-10-12 A | 156 |  | QA |
| 162 | CSM | 4d | 2006-09-14 A | 2006-09-19 A | 133 |  | Kunal; Vijay |
| 163 | CLM | 7d | 2006-10-04 A | 2006-10-12 A | 157 |  | Vijay |
| 164 | **Documentation** | 4d | 2006-10-13 | 2006-10-18 |  |  |  |
| 165 | CLM User Guide Update | 4d | 2006-10-13 | 2006-10-18 | 163 |  | Vijay |

Removed: 118 Linking a User to Application Context; 123 Performance Enhancements; 124 Fix Update Methods; 125 Development/Unit Test; 132 Secure SDK Interfaces; 133 Add new "Type" attribute to Protection Element; 139 Load Test Performance Enhancements/APIs; 146 QA Test Components; 147 Test Support; 150 Design

Changed:

| ID | Task | Start | Finish | Duration | Complete | Total float | Predecessors | Other |
| --- | --- | --- | --- | --- | --- | --- | --- | --- |
| 1 | **CSM 3.2** |  | 2006-12-22 → 2006-12-28 (+6d) | 173d? → 177d? | 32% → 83% |  |  |  |
| 2 | **Elaboration** |  | 2006-07-07 → 2006-08-01 (+25d) | 55.95d? → 73d? | 87% → 92% | 117.05d → 100d |  |  |
| 3 | **Iteration 1** |  |  |  | 75% → 83% |  |  |  |
| 11 | **Project Scope** |  | 2006-05-26 A |  | 88% → 100% | 146d → none |  |  |
| 17 | **LOE/Requirements Gathering** |  | 2006-05-25 A |  | 77% → 100% | 147d → none |  |  |
| 24 | Estimate for Grid Integration/ Project Scope Doc | 2006-05-16 A | 2006-05-24 A |  | 0% → 100% | 157.4d → none |  |  |
| 64 | **Iteration 3** |  | 2006-07-07 A |  | 96% → 100% | 117.05d → none |  |  |
| 65 | **Test Plan** |  | 2006-07-07 A |  | 88% → 100% | 117.05d → none |  |  |
| 70 | Test Plan Development Rework | 2006-07-05 A | 2006-07-07 A |  | 0% → 100% | 125.7d → none |  |  |
| 81 | **UML Model** |  | 2006-06-30 A |  | 99% → 100% | 123d → none |  |  |
| 84 | UML Model Changes Approved | 2006-06-30 A | 2006-06-30 A |  | 0% → 100% | 131.65d → none |  |  |
| 98 | **Construction** |  |  |  | 7% → 91% | 18d → 22d |  |  |
| 99 | Production Support | 2006-07-12 A | 2006-11-01 A |  | 0% → 100% | 43.65d → none |  |  |
| 100 | **Iteration 0.5** |  |  | 28.7d → 29.05d | 35% → 99% | 98.35d → 98d |  |  |
| 101 | **Hibernate 3.1 Upgrade/JDK Backwards Compatibility/MySQL Upgrade Test** |  |  |  | 83% → 99% |  |  |  |
| 103 | Regression Testing | 2006-07-13 A |  |  | 0% → 95% |  |  |  |
| 104 | **Open LDAP/Active Directory Authorization** |  | 2006-07-20 A |  | 93% → 100% | 34.35d → none |  |  |
| 106 | Development/Unit Test |  | 2006-07-20 A |  | 90% → 100% | 34.35d → none |  |  |
| 107 | **Auth Policy Caching** |  | 2006-07-14 A |  | 92% → 100% | 102d → none |  |  |
| 109 | Development/Unit Testing |  | 2006-07-14 A |  | 90% → 100% | 102d → none |  |  |
| 110 | **Expose Core Authorization Service as Web Service** | 2006-07-17 A | 2006-07-28 A |  | 0% → 100% | 102d → none |  |  |
| 111 | Design | 2006-07-17 A | 2006-07-17 A |  | 0% → 100% | 102d → none |  |  |
| 112 | Development | 2006-07-18 A | 2006-07-28 A |  | 0% → 100% | 102d → none |  |  |
| 113 | **BMS Web Service Integration** | 2006-07-20 A | 2006-07-28 A |  | 0% → 100% | 34.35d → none |  |  |
| 114 | Design | 2006-07-20 A | 2006-07-21 A |  | 0% → 100% | 34.35d → none |  |  |
| 115 | Development/Unit Test | 2006-07-21 A | 2006-07-28 A |  | 0% → 100% | 34.35d → none |  |  |
| 117 | **Regression Test Complete Code Coverage** |  | 2006-07-21 A |  | 40% → 100% | 101.05d → none |  |  |
| 118 | Implementation |  | 2006-07-21 A |  | 40% → 100% | 101.05d → none |  |  |
| 119 | QA Test | 2006-07-21 A | 2006-07-31 A |  | 0% → 100% | 101.05d → none |  |  |
| 120 | Testing Support | 2006-07-28 A | 2006-08-03 A | 4d → 4.35d | 0% → 100% | 34.35d → none |  |  |
| 121 | **Iteration 1** | 2006-08-03 → 2006-08-01 A (-2d) | 2006-10-02 → 2006-10-18 (+16d) | 41d → 56d | 0% → 97% | 34.35d → 45d | 120 → none |  |
| 125 | **Design** | 2006-09-07 → 2006-08-04 A (-34d) | 2006-09-12 → 2006-08-29 A (-14d) | 3d → 17.5d | 0% → 100% | 34.35d → none | none → 124 |  |
| 129 | **Improve Exception Handling** | 2006-08-14 → 2006-09-01 A (+18d) | 2006-08-21 → 2006-09-06 A (+16d) | 5d → 3d | 0% → 100% | 34.35d → none |  |  |
| 130 | Development/Unit Test | 2006-08-07 → 2006-09-01 A (+25d) | 2006-08-14 → 2006-09-06 A (+23d) | 5d → 3d | 0% → 100% | 34.35d → none | 134 → 131 | resources Orlando → Kunal |
| 131 | **Grid SAML Assertion Support** | 2006-08-16 → 2006-08-15 A (-1d) | 2006-09-07 → 2006-08-31 A (-7d) | 15d → 13d | 0% → 100% | 34.35d → none |  |  |
| 132 | Development | 2006-08-18 → 2006-08-15 A (-3d) | 2006-09-07 → 2006-08-31 A (-7d) |  | 0% → 100% | 34.35d → none | 147 → 128 |  |
| 134 | Design | 2006-08-03 → 2006-09-07 A (+35d) | 2006-08-07 → 2006-09-08 A (+32d) |  | 0% → 100% | 34.35d → none | 120 → 129 | resources Orlando → Kunal |
| 135 | Development | 2006-08-23 → 2006-09-11 A (+19d) | 2006-09-12 → 2006-09-13 A (+1d) | 13d → 3d | 0% → 100% | 34.35d → none | 152 → 134 | resources Orlando → Kunal |
| 136 | **BMS Code Integration** | 2006-08-21 → 2006-08-30 A (+9d) | 2006-09-12 → 2006-09-13 A (+1d) | 15d → 10d | 0% → 100% | 34.35d → none |  |  |
| 144 | Design | 2006-08-08 → 2006-08-21 A (+13d) | 2006-08-16 → 2006-08-21 A (+5d) | 6d → 1d | 0% → 100% | 34.35d → none | Development/Unit Test → 139 | constraint none → start no earlier than 2006-08-21; resources Kunal → Vijay |
| 147 | Design | 2006-08-16 → 2006-09-18 A (+33d) | 2006-08-18 → 2006-09-18 A (+31d) | 2d → 1d | 0% → 100% | 34.35d → none | 169 → 154 | constraint none → start no earlier than 2006-08-15 |
| 152 | Design | 2006-08-21 → 2006-09-08 A (+18d) | 2006-08-23 → 2006-09-08 A (+16d) | 2d → 1d | 0% → 100% | 34.35d → none | 155 → none | constraint none → start no earlier than 2006-08-21; resources Orlando → Vijay |
| 155 | Development/Unit Test | 2006-08-14 → 2006-09-01 A (+18d) | 2006-08-21 → 2006-09-15 A (+25d) | 5d → 10d | 0% → 100% | 34.35d → none | 130 → none | constraint none → finish no earlier than 2006-08-31; resources Orlando → Kunal |
| 158 | **QA Test Components** | 2006-09-12 → 2006-09-01 A (-11d) | 2006-09-18 → 2006-10-12 A (+24d) | 4d → 29d | 0% → 100% | 57.35d → none | 131, 136 → none | resources QA → none |
| 161 | **Test Support** | 2006-09-12 → 2006-09-14 A (+2d) | 2006-09-18 → 2006-10-12 A (+24d) | 4d → 21d | 0% → 100% | 34.35d → none | 125, 136 → none | resources Kuanl; Orlando → none |
| 166 | **Iteration 2** | 2006-09-18 → 2006-09-20 A (+2d) | 2006-10-05 → 2006-10-09 (+4d) | 13d → 14d | 0% → 94% | 34.35d → 52d |  |  |
| 167 | **Secure SDK interfaces** | 2006-09-18 → 2006-09-20 A (+2d) | 2006-10-02 → 2006-09-29 A (-3d) | 10d → 8d | 0% → 100% | 34.35d → none |  |  |
| 168 | Development | 2006-09-20 A | 2006-10-02 → 2006-09-29 A (-3d) |  | 0% → 100% | 34.35d → none | 170 → 162 |  |
| 169 | **SDK Instance Level Security Design** | 2006-08-08 → 2006-10-02 A (+55d) | 2006-08-16 → 2006-10-09 (+54d) |  | 0% → 75% | 34.35d → 52d |  |  |
| 170 | Design | 2006-09-18 → 2006-10-02 A (+14d) | 2006-09-20 → 2006-10-09 (+19d) | 2d → 6d | 0% → 75% | 34.35d → 52d | 161 → 167 |  |
| 171 | **Defect Fixes** | 2006-09-18 → 2006-09-20 A (+2d) | 2006-10-02 → 2006-10-03 A (+1d) |  | 0% → 100% | 34.35d → none |  |  |
| 172 | Development/Unit Test | 2006-09-18 → 2006-09-20 A (+2d) | 2006-10-02 → 2006-10-03 A (+1d) |  | 0% → 100% | 34.35d → none | 161 → 162 | resources Orlando → Vijay |
| 173 | **Iteration 3** | 2006-10-05 → 2006-10-04 A (-1d) |  | 36.35d → 37.5d | 0% → 58% |  |  |  |
| 174 | **Add a new "Type" attribute to Protection Element** | 2006-10-05 → 2006-10-09 A (+4d) | 2006-10-11 A | 4d → 3d | 0% → 100% | 34.35d → none |  |  |
| 175 | Development | 2006-10-06 → 2006-10-09 A (+3d) | 2006-10-11 A |  | 0% → 100% | 34.35d → none | Design → 169 |  |
| 176 | **Defect Fixes** | 2006-10-05 → 2006-10-04 A (-1d) | 2006-10-17 A | 8d → 9.5d | 0% → 100% | 34.35d → none |  |  |
| 177 | Development/Unit Test | 2006-10-05 → 2006-10-04 A (-1d) | 2006-10-12 → 2006-10-17 A (+5d) | 5d → 9d | 0% → 100% | 37.35d → none | Test Support → 171 | resources Orlando → Vijay |
| 178 | Improve the Deployment of CSM & Integration with Other Apps | 2006-10-11 → 2006-10-12 A (+1d) | 2006-10-17 A |  | 0% → 100% | 34.35d → none |  |  |
| 179 | Begin Documentation Draft | 2006-10-12 → 2006-10-17 A (+5d) | 2006-10-17 A | 3d → 0d | 0% → 100% | 43.35d → none |  | resources Orlando → Vijay |
| 180 | **Testing** | 2006-10-17 → 2006-10-18 A (+1d) | 2006-10-20 → 2006-11-01 A (+12d) | 3d → 11d | 0% → 100% | 34.35d → none |  |  |
| 181 | QA Test Components | 2006-10-17 → 2006-10-18 A (+1d) | 2006-10-20 → 2006-11-01 A (+12d) | 3d → 11d | 0% → 100% | 43.35d → none |  |  |
| 182 | Test Support | 2006-10-17 → 2006-10-18 A (+1d) | 2006-10-20 A |  | 0% → 100% | 34.35d → none | 176 → 176, 178 | resources Orlando; Kunal → Vijay; Kunal |
| 183 | **Documentation** | 2006-10-20 → 2006-10-23 A (+3d) | 2006-10-27 → 2006-11-07 (+11d) | 5d → 11d | 0% → 80% | 7.35d → 28d |  |  |
| 184 | Write Draft Documentation/ Update User Guide | 2006-10-20 → 2006-10-23 A (+3d) |  |  | 0% → 80% | 34.35d → 34d |  | resources Orlando; Kunal → Vijay; Kunal |
| 185 | Draft Documentation/User Documentation Completed | 2006-10-27 → 2006-11-07 (+11d) | 2006-10-27 → 2006-11-07 (+11d) |  |  | 3d → 0d |  | constraint start no earlier than 2006-10-27 → start no earlier than 2006-11-07 |
| 187 | Push Candidate to Staging | 2006-10-27 → 2006-10-30 (+3d) |  |  |  | 34.35d → 34d |  | resources Kunal; Orlando → Kunal; Vijay |
| 191 | Test Support/Update Java Docs/Revisit CSM Model |  |  |  |  |  |  | was named Test Support; resources Orlando; Kunal → Vijay; Kunal |
| 193 | Test Execution/Suppport |  |  |  |  |  |  | resources Orlando [50%]; Kunal [50%] → Vijay [50%]; Kunal [50%] |
| 195 | **Transition** | 2006-10-27 → 2006-11-07 (+11d) | 2006-12-22 → 2006-12-28 (+6d) | 39d → 36d |  |  |  |  |
| 196 | **Documentation** | 2006-10-27 → 2006-11-07 (+11d) | 2006-12-15 → 2006-12-27 (+12d) |  |  | 3d → 0d |  |  |

| ID | Task | Start | Finish | Total float | Other |
| --- | --- | --- | --- | --- | --- |
| 197 | Review Technical/User Docs | 2006-10-27 → 2006-11-07 (+11d) | 2006-11-10 → 2006-11-21 (+11d) | 3d → 0d |  |
| 199 | Incorporate Comments to User Docs/Deployment Notes | 2006-11-13 → 2006-11-22 (+9d) | 2006-11-27 → 2006-12-06 (+9d) | 3d → 0d | was named Incorporate Comments to User Docs; resources Orlando [50%]; Kunal [50%] → Vijay [50%]; Kunal [50%] |
| 201 | Finalize Documents | 2006-11-28 → 2006-12-07 (+9d) | 2006-12-15 → 2006-12-27 (+12d) | 4d → 1d |  |
| 203 | Staging | 2006-11-28 → 2006-12-07 (+9d) | 2006-12-18 → 2006-12-28 (+10d) | 3d → 0d | resources Orlando; Kunal → Vijay; Kunal |
