# NCICBSecurityService

How a schedule from MS Project changed from version to version. A marks actual dates.

## Version 1 (saved 2005-03-31, file NCICBSecurityService.mpp)

Note of the change: *** empty log message ***

| ID | WBS | Task | Duration | Start | Finish | Predecessors | Complete | Total float | Constraint |
| --- | --- | --- | --- | --- | --- | --- | --- | --- | --- |
| 1 | 1 | **Security Module (Release One)** | 174d? | 2004-08-02 A | 2005-03-31 |  | 92% | 0d |  |
| 2 | 1.1 | **Inception** | 38d | 2004-08-02 A | 2004-09-22 A |  | 100% |  |  |
| 3 |  | Phase I Evaluation | 7d | 2004-08-02 A | 2004-08-10 A |  | 100% |  | start no earlier than 2004-08-02 |
| 4 |  | Interview NCICB Team Leads | 12d | 2004-08-09 A | 2004-08-24 A |  | 100% |  | start no earlier than 2004-08-09 |
| 5 |  | Scope and Vision Document | 10d | 2004-08-30 A | 2004-09-10 A |  | 100% |  | start no earlier than 2004-08-30 |
| 6 |  | Supplentary Specifications | 3d | 2004-09-01 A | 2004-09-03 A | 4 | 100% |  | start no earlier than 2004-09-01 |
| 7 |  | Fuctional Specifications | 5d | 2004-09-06 A | 2004-09-10 A | 6 | 100% |  |  |
| 8 |  | Use Case Model | 5d | 2004-09-13 A | 2004-09-17 A | 7 | 100% |  |  |
| 9 |  | Identify Risk List | 3d | 2004-09-20 A | 2004-09-22 A | 8 | 100% |  |  |
| 10 | 1.2 | **Elaboration** | 23d? | 2004-09-27 A | 2004-10-27 |  | 95% | 107d |  |
| 11 | 1.2.1 | **Iteration I** | 13d | 2004-09-27 A | 2004-10-13 |  | 98% | 117d |  |
| 12 |  | Level 1 - 2 Use Cases | 5d | 2004-09-27 A | 2004-10-01 A |  | 100% |  |  |
| 13 |  | Risk List Priority | 3d | 2004-09-27 A | 2004-09-29 A |  | 100% |  |  |
| 14 |  | Detailed Iteration Release Plan | 5d | 2004-09-27 A | 2004-10-01 |  | 95% | 125d |  |
| 15 | 1.2.1.4 | **Finalize Requirements** | 9d | 2004-10-01 A | 2004-10-13 A |  | 100% |  |  |
| 16 |  | Stakeholder Sign Off | 1d | 2004-10-01 A | 2004-10-01 A |  | 100% |  | start no earlier than 2004-10-01 |
| 17 |  | User Working Group Review | 1d | 2004-10-13 A | 2004-10-13 A | 16 | 100% |  | start no earlier than 2004-10-13 |
| 18 | 1.2.2 | **Iteration II** | 17d? | 2004-10-05 A | 2004-10-27 |  | 93% | 107d |  |
| 19 |  | Develop Architecture Prototype | 3d | 2004-10-25 A | 2004-10-27 A |  | 100% |  | start no earlier than 2004-10-25 |
| 20 |  | Software Architecture Document | 15d | 2004-10-05 A | 2004-10-25 |  | 90% | 109d | finish no earlier than 2004-10-25 |
| 21 |  | Architecture Review | 1d? | 2004-10-26 A | 2004-10-26 A | 20 | 100% |  |  |
| 22 |  | Prioritize Risk List | 1d | 2004-10-26 A | 2004-10-26 A |  | 100% |  | start no earlier than 2004-10-26 |
| 23 |  | Phase Review | 1d? | 2004-09-27 | 2004-09-27 |  |  | 129d |  |
| 24 | 1.4 | **Construction** | 130d? | 2004-09-26 A | 2005-03-25 |  | 89% | 4d |  |
| 25 | 1.4.1 | **Iteration I** | 40d? | 2004-09-26 A | 2004-11-19 A |  | 100% |  |  |
| 26 |  | Iteration Plan | 1d | 2004-10-26 A | 2004-10-26 A |  | 100% |  | start no earlier than 2004-10-26 |
| 27 | 1.4.1.2 | **Authentication** | 40d? | 2004-09-27 A | 2004-11-19 A |  | 100% |  |  |
| 28 | 1.4.1.2.1 | **Design** | 4d | 2004-10-27 A | 2004-11-01 A |  | 100% |  |  |
| 29 | 1.4.1.2.1.1 | **Documentation** | 4d | 2004-10-27 A | 2004-11-01 A |  | 100% |  |  |
| 30 |  | Level 3 - 4 Use Cases | 0.5d | 2004-10-27 A | 2004-10-27 A |  | 100% |  | start no earlier than 2004-10-27 |
| 31 |  | Use Case Model | 0.5d | 2004-10-27 A | 2004-10-27 A | 30 | 100% |  | start no earlier than 2004-10-27 |
| 32 |  | Working Group Use Case Review | 1d | 2004-10-28 A | 2004-10-28 A | 31 | 100% |  |  |
| 33 |  | UML Sequence Diagram | 1d | 2004-10-29 A | 2004-10-29 A | 32 | 100% |  |  |
| 34 |  | UML Class Diagram | 1d | 2004-11-01 A | 2004-11-01 A | 33 | 100% |  |  |
| 35 |  | UML Activity Diagram | 1d | 2004-10-29 A | 2004-10-29 A |  | 100% |  | start no earlier than 2004-10-29 |
| 36 |  | Design Review | 1d | 2004-11-01 A | 2004-11-01 A | 35 | 100% |  |  |
| 37 | 1.4.1.2.2 | **Implementation** | 11d | 2004-11-01 A | 2004-11-15 A |  | 100% |  |  |
| 38 |  | Data Model Enhancement | 5d | 2004-11-01 A | 2004-11-05 A |  | 100% |  | start no earlier than 2004-11-01 |
| 39 |  | Data Model Documentation with Examples | 1d | 2004-11-08 A | 2004-11-08 A |  | 100% |  | start no earlier than 2004-11-08 |
| 40 | 1.4.1.2.2.3 | **JAAS Authentication Modules** | 10d | 2004-11-02 A | 2004-11-15 A |  | 100% |  |  |
| 41 |  | LDAP | 5d | 2004-11-02 A | 2004-11-08 A | 36 | 100% |  | start no earlier than 2004-11-02 |
| 42 |  | RBDMS | 5d | 2004-11-08 A | 2004-11-12 A | 36 | 100% |  | finish no earlier than 2004-11-12 |
| 43 |  | Junit Test Development | 4d | 2004-11-09 A | 2004-11-12 A |  | 100% |  | finish no earlier than 2004-11-12 |
| 44 |  | Code Reviews | 0.33d | 2004-11-15 A | 2004-11-15 A | 41, 42, 43 | 100% |  | finish no earlier than 2004-11-15 |
| 45 | 1.4.1.2.3 | **Unit Testing** | 40d? | 2004-09-27 A | 2004-11-19 A |  | 100% |  |  |
| 46 |  | Perform Testing | 1d | 2004-11-16 A | 2004-11-16 A | 44 | 100% |  | start no earlier than 2004-11-15 |
| 47 |  | Evaluate Results | 1d | 2004-11-17 A | 2004-11-17 A | 46 | 100% |  | start no earlier than 2004-11-16 |
| 48 |  | Integration Testing | 1d | 2004-11-18 A | 2004-11-18 A | 47 | 100% |  |  |
| 49 |  | User Working Group Review (SAD, Design Models) | 1d | 2004-11-19 A | 2004-11-19 A | 48 | 100% |  |  |
| 50 |  | Synch the EA Model | 1d? | 2004-09-27 A | 2004-09-27 A |  | 100% |  |  |
| 51 |  | Iteration I Complete | 0d | 2004-09-26 A | 2004-09-26 A |  | 100% |  |  |
| 52 | 1.4.2 | **Iteration II** | 23.5d? | 2004-11-23 A | 2004-12-24 A |  | 100% |  |  |
| 53 |  | Iteration Plan | 1d | 2004-11-30 A | 2004-11-30 A |  | 100% |  | start no earlier than 2004-11-30 |
| 54 | 1.4.2.2 | **Authorization** | 23.5d? | 2004-11-23 A | 2004-12-24 A |  | 100% |  |  |
| 55 | 1.4.2.2.1 | **Design** | 6d | 2004-12-01 A | 2004-12-08 A |  | 100% |  |  |
| 56 | 1.4.2.2.1.1 | **Documentation** | 6d | 2004-12-01 A | 2004-12-08 A |  | 100% |  |  |
| 57 |  | Level 3 - 4 Use Cases | 1d | 2004-12-01 A | 2004-12-01 A |  | 100% |  | start no earlier than 2004-12-01 |
| 58 |  | Use Case Model | 1d | 2004-12-01 A | 2004-12-01 A | 53 | 100% |  | start no earlier than 2004-11-22 |
| 59 |  | User Working Group Review | 1d | 2004-12-02 A | 2004-12-02 A | 58 | 100% |  |  |
| 60 |  | UML Sequence Diagram | 1d | 2004-12-03 A | 2004-12-03 A | 59 | 100% |  |  |
| 61 |  | UML Class Diagram | 1d | 2004-12-06 A | 2004-12-06 A | 60 | 100% |  |  |
| 62 |  | UML Activity Diagram | 1d | 2004-12-06 A | 2004-12-06 A |  | 100% |  | start no earlier than 2004-12-06 |
| 63 |  | Design Review | 1d | 2004-12-07 A | 2004-12-07 A | 62 | 100% |  |  |
| 64 |  | UML Model for EVS | 2d | 2004-12-07 A | 2004-12-08 A |  | 100% |  | start no earlier than 2004-12-07 |
| 65 | 1.4.2.2.2 | **Implementation** | 23.5d? | 2004-11-23 A | 2004-12-24 A |  | 100% |  |  |
| 66 |  | Authorization XML Schema | 10d | 2004-12-09 A | 2004-12-22 A |  | 100% |  | start no earlier than 2004-12-09 |
| 67 | 1.4.2.2.2.2 | **Authorization API** | 23.5d? | 2004-11-23 A | 2004-12-24 A |  | 100% |  |  |
| 68 |  | Enhance Phase I Object Model | 7d | 2004-11-23 A | 2004-12-01 A | 38 | 100% |  | start no earlier than 2004-12-23 |
| 69 | 1.4.2.2.2.2.2 | **develop run time API** | 16.5d? | 2004-12-02 A | 2004-12-24 A | 68 | 100% |  |  |
| 70 |  | Implement AuthorizationManager Interface | 15d | 2004-12-02 A | 2004-12-22 A |  | 100% |  | finish no earlier than 2004-12-22 |

| ID | WBS | Task | Duration | Start | Finish | Predecessors | Complete | Total float | Constraint |
| --- | --- | --- | --- | --- | --- | --- | --- | --- | --- |
| 71 |  | Junit Test Development | 4.5d | 2004-12-16 A | 2004-12-22 A |  | 100% |  | finish no earlier than 2004-12-22 |
| 72 |  | Code Review | 1d | 2004-12-23 A | 2004-12-24 A | 71 | 100% |  |  |
| 73 |  | Synch the EA Model | 1d? | 2004-12-02 A | 2004-12-02 A |  | 100% |  |  |
| 74 |  | Iteration II Complete | 0d | 2004-12-21 A | 2004-12-21 A |  | 100% |  | start no earlier than 2004-12-21 |
| 75 | 1.4.3 | **Iteration III** | 130d | 2004-09-27 A | 2005-03-25 |  | 38% | 4d |  |
| 76 |  | Iteration Plan | 1d | 2004-12-21 | 2004-12-21 |  |  | 72d | start no earlier than 2004-12-21 |
| 77 | 1.4.3.2 | **Prototype (Reference Implementation)** | 130d | 2004-09-27 A | 2005-03-25 |  | 38% | 4d |  |
| 78 | 1.4.3.2.1 | **Implementation** | 59d | 2005-01-04 A | 2005-03-25 |  | 58% | 4d |  |
| 79 | 1.4.3.2.1.1 | **Demo Application** | 59d | 2005-01-04 A | 2005-03-25 |  | 58% | 4d |  |
| 80 |  | Use Case Development | 1d | 2005-01-07 A | 2005-01-07 A |  | 100% |  | start no earlier than 2005-01-07 |
| 81 |  | Integrate Authentication | 2d | 2005-01-27 A | 2005-01-28 A | 76 | 100% |  | finish no earlier than 2005-01-28 |
| 82 | 1.4.3.2.1.1.3 | **User Interface** | 21d | 2005-01-04 A | 2005-02-01 A | 81 | 100% |  |  |
| 83 |  | Develop Struts Actions, Forms, Config, Validation | 10d | 2005-01-04 A | 2005-02-01 A |  | 100% |  |  |
| 84 |  | domain/persistance | 8d | 2005-01-11 A | 2005-02-01 A |  | 100% |  | finish no earlier than 2005-01-20 |
| 85 |  | Integrate Authorization | 15d | 2005-03-07 | 2005-03-25 |  |  | 4d | start no earlier than 2005-03-07 |
| 86 | 1.4.3.2.2 | **Documentation** | 109d | 2004-09-27 A | 2005-02-24 |  | 8% | 25d |  |
| 87 |  | User Guide (RI) | 23d | 2005-01-25 A | 2005-02-24 |  | 4% | 25d | finish no earlier than 2005-02-24 |
| 88 |  | Synch the EA Model | 1d | 2004-09-27 A | 2004-09-27 A |  | 100% |  |  |
| 89 | 1.4.4 | **Iteration IV** | 123d | 2004-09-27 A | 2005-03-16 A |  | 100% |  |  |
| 90 |  | Iteration Plan | 2d | 2004-10-18 A | 2004-10-19 A |  | 100% |  | start no earlier than 2004-10-18 |
| 91 | 1.4.4.2 | **User Provisioning** | 123d | 2004-09-27 A | 2005-03-16 A |  | 100% |  |  |
| 92 | 1.4.4.2.1 | **Design** | 27d | 2004-10-20 A | 2004-11-25 A |  | 100% |  |  |
| 93 | 1.4.4.2.1.1 | **Documentation** | 27d | 2004-10-20 A | 2004-11-25 A |  | 100% |  |  |
| 94 |  | Level 3 - 4 Use Cases | 1d | 2004-10-27 A | 2004-10-27 A | 90 | 100% |  | start no earlier than 2004-10-27 |
| 95 |  | Use Case Model | 6d | 2004-10-20 A | 2004-10-27 A | 90 | 100% |  | finish no earlier than 2004-10-27 |
| 96 |  | Gather Requirements | 5d | 2004-10-28 A | 2004-11-03 A | 95 | 100% |  |  |
| 97 |  | Create DDL for mysql | 1d | 2004-11-10 A | 2004-11-10 A |  | 100% |  | start no earlier than 2004-11-10 |
| 98 |  | Generate Hibernate Mappings | 1d | 2004-11-22 A | 2004-11-22 A | 97 | 100% |  |  |
| 99 |  | Generate Hibernate Mappings | 1d | 2004-11-23 A | 2004-11-23 A | 98 | 100% |  |  |
| 100 |  | UML Class Diagram | 1d | 2004-11-24 A | 2004-11-24 A | 99 | 100% |  |  |
| 101 |  | Design Review | 1d | 2004-11-25 A | 2004-11-25 A | 100 | 100% |  | finish no earlier than 2004-11-15 |
| 102 | 1.4.4.2.2 | **Implementation** | 50d | 2004-11-29 A | 2005-02-04 A |  | 100% |  |  |
| 103 |  | Create Hibernate Mappings | 4d | 2004-12-03 A | 2004-12-08 A |  | 100% |  | start no earlier than 2004-12-03 |
| 104 |  | Create Roles | 3.75d | 2004-11-29 A | 2004-12-10 A | 103 | 100% |  | start no earlier than 2004-11-29 |
| 105 |  | Modify Roles | 2.5d | 2004-12-10 A | 2004-12-14 A | 104 | 100% |  |  |
| 106 |  | Create Privileges | 1.5d | 2004-12-14 A | 2004-12-16 A | 105 | 100% |  |  |
| 107 |  | Modify Privileges | 1.5d | 2004-12-16 A | 2004-12-17 A | 106 | 100% |  |  |
| 108 |  | Assign Privileges to Roles | 1.5d | 2004-12-17 A | 2004-12-21 A | 107 | 100% |  |  |
| 109 |  | Create Protection Elements | 1d | 2004-12-21 A | 2004-12-22 A | 108 | 100% |  |  |
| 110 |  | Modify Protection Elements | 1d | 2004-12-22 A | 2004-12-23 A | 109 | 100% |  |  |
| 111 |  | Create Protection Group | 1d | 2004-12-23 A | 2004-12-24 A | 110 | 100% |  |  |
| 112 |  | Modify Protection Group | 1d | 2004-12-24 A | 2004-12-27 A | 111 | 100% |  |  |
| 113 |  | Assign Protection Elements to Groups | 1d | 2004-12-27 A | 2004-12-28 A | 112 | 100% |  |  |
| 114 |  | Assign Protection Elements to Users | 1d | 2005-01-04 A | 2005-01-04 A |  | 100% |  | start no earlier than 2005-01-04 |
| 115 |  | Assign Protection Group to User Roles | 1d | 2005-01-05 A | 2005-01-05 A | 114 | 100% |  |  |
| 116 | 1.4.4.2.2.14 | **Struts Interface** | 46d | 2004-12-03 A | 2005-02-04 A |  | 100% |  |  |
| 117 |  | Design HTML/JSP Pages | 46d | 2004-12-03 A | 2005-02-04 A |  | 100% |  |  |
| 118 |  | Develop Struts Actions, Forms, Config, Validation | 45d | 2004-12-06 A | 2005-02-04 A |  | 100% |  | finish no earlier than 2005-02-04 |
| 119 |  | Code Reviews (Onging Task) | 27d | 2004-11-30 A | 2005-01-05 A |  | 100% |  | finish no earlier than 2005-01-05 |
| 120 | 1.4.4.2.2.16 | **Testing** | 15d | 2005-01-14 A | 2005-02-04 A |  | 100% |  |  |
| 121 |  | Unit Testing Complete | 0d | 2005-01-14 A | 2005-01-14 A | 116, 118 | 100% |  | start no earlier than 2004-12-15 |
| 122 | 1.4.4.2.2.16.2 | **Integration Testing (UPT Only)** | 11d | 2005-01-21 A | 2005-02-04 A | 121 | 100% |  |  |
| 123 |  | Testing | 11d | 2005-01-21 A | 2005-02-04 A |  | 100% |  | finish no earlier than 2005-02-04 |
| 124 |  | Defect Fixes | 11d | 2005-01-21 A | 2005-02-04 A |  | 100% |  | finish no earlier than 2005-02-04 |
| 125 | 1.4.4.2.2.16.3 | **Integration Testing Authorization** | 3d | 2005-01-21 A | 2005-01-25 A | 121, 82 | 100% |  |  |
| 126 |  | Testing | 1d | 2005-01-21 A | 2005-01-21 A |  | 100% |  |  |
| 127 |  | Defect Fixes | 2d | 2005-01-24 A | 2005-01-25 A | 126 | 100% |  |  |
| 128 |  | Presentation Dry Run | 1.5d | 2005-01-26 A | 2005-01-27 A | 125 | 100% |  | start no earlier than 2005-01-14 |
| 129 |  | User Working Group Review | 0.5d | 2005-02-07 A | 2005-02-28 A | 124, 128 | 100% |  | start no earlier than 2005-01-27 |
| 130 |  | API Load testing | 7d | 2005-03-08 A | 2005-03-16 A | 142 | 100% |  | start no earlier than 2005-03-08 |
| 131 |  | Synch the EA Model | 1d | 2004-09-27 A | 2004-09-27 A |  | 100% |  |  |
| 132 |  | Iteration IV Complete | 0d | 2005-01-14 A | 2005-01-14 A |  | 100% |  | start no earlier than 2005-01-14 |
| 133 | 1.5 | **Transition** | 134d? | 2004-09-27 A | 2005-03-31 A |  | 100% |  |  |
| 134 | 1.5.1 | **Iteration I** | 127.5d? | 2004-09-27 A | 2005-03-23 A |  | 100% |  |  |
| 135 | 1.5.1.1 | **Documentation** | 33d | 2005-01-21 A | 2005-03-08 A |  | 100% |  |  |
| 136 |  | QA of BackEnd APIs (2 days Task) | 0d | 2005-01-22 A | 2005-01-23 A |  | 100% |  |  |
| 137 |  | UPT Deployment Guide Document | 11d | 2005-01-21 A | 2005-02-04 A |  | 100% |  | finish no earlier than 2005-02-04 |
| 138 |  | Java Docs | 4d | 2005-01-24 A | 2005-01-27 A |  | 100% |  | start no earlier than 2005-01-24 |
| 139 |  | UPT User Guide | 5d | 2005-02-07 A | 2005-02-11 A | 137 | 100% |  | start no earlier than 2005-02-07 |
| 140 |  | API Guide | 3d | 2005-02-14 A | 2005-02-16 A | 139 | 100% |  |  |

| ID | WBS | Task | Duration | Start | Finish | Predecessors | Complete | Constraint |
| --- | --- | --- | --- | --- | --- | --- | --- | --- |
| 141 |  | csm Application developers guide | 10d | 2005-02-23 A | 2005-03-08 A |  | 100% | start no earlier than 2005-02-23 |
| 142 |  | Input to caCore Technical Guide | 1d | 2005-02-17 A | 2005-02-17 A | 141 | 100% | finish no earlier than 2005-02-14 |
| 143 | 1.5.1.2 | **Integration Pilot (Release One)** | 127.5d? | 2004-09-27 A | 2005-03-23 A |  | 100% |  |
| 144 | 1.5.1.2.1 | **Client Implementation (with c3pr)** | 8d | 2005-02-25 A | 2005-03-08 A | 122 | 100% |  |
| 145 |  | Design | 2d | 2005-02-25 A | 2005-02-28 A |  | 100% | start no earlier than 2005-01-12 |
| 146 |  | Development | 5d | 2005-02-28 A | 2005-03-04 A |  | 100% |  |
| 147 |  | Testing | 2d | 2005-03-07 A | 2005-03-08 A | 146 | 100% |  |
| 148 |  | Integration Testing | 5d | 2005-03-09 A | 2005-03-15 A | 147 | 100% | start no earlier than 2005-01-25 |
| 149 |  | Evaluate Results | 0.5d | 2005-03-16 A | 2005-03-16 A | 148 | 100% |  |
| 150 |  | Apply Needed Enhancements | 5d | 2005-03-16 A | 2005-03-23 A | 149 | 100% |  |
| 151 |  | Synch the EA Model | 1d? | 2004-09-27 A | 2004-09-27 A |  | 100% |  |
| 152 |  | Iteration I Complete | 0d | 2005-02-15 A | 2005-02-15 A |  | 100% | start no earlier than 2005-02-15 |
| 153 | 1.5.2 | **Iteration II** | 28d | 2005-02-18 A | 2005-03-29 A |  | 100% |  |
| 154 |  | Deploy UPT on QA | 2d | 2005-02-18 A | 2005-02-21 A |  | 100% | start no earlier than 2005-02-18 |
| 155 |  | Testing on QA | 5d | 2005-02-21 A | 2005-02-25 A |  | 100% | start no earlier than 2005-02-21 |
| 156 |  | Test on JBOSS 4 | 5d | 2005-02-21 A | 2005-02-25 A |  | 100% | start no earlier than 2005-02-21 |
| 157 |  | Staging | 5d | 2005-03-16 A | 2005-03-22 A |  | 100% | start no earlier than 2005-03-16 |
| 158 |  | Testing | 3d | 2005-02-22 A | 2005-02-24 A |  | 100% | start no earlier than 2005-02-22 |
| 159 |  | Iteration II Complete | 0d | 2005-02-28 A | 2005-02-28 A |  | 100% | start no earlier than 2005-02-28 |
| 160 |  | Tag the CVS | 1d | 2005-03-29 A | 2005-03-29 A |  | 100% |  |
| 161 |  | caCore Release 3 | 1d | 2005-03-31 A | 2005-03-31 A |  | 100% | start no earlier than 2005-03-07 |

## Version 2 (saved 2005-04-14, file NCICBSecurityService_phase3.mpp)

Note of the change: *** empty log message ***

Last finish 2005-03-31 → 2005-05-23 (+53d). Complete tasks 113 → 106.

Added:

| ID | Task | Duration | Start | Finish | Predecessors | Constraint | Resources |
| --- | --- | --- | --- | --- | --- | --- | --- |
| 4 | RI documentation | 7d | 2005-04-01 A | 2005-04-11 |  | finish no earlier than 2005-04-11 | Kunal; Eric |
| 8 | caBIG Annual Meeting | 2d | 2005-04-12 A | 2005-04-13 A |  |  | Vinay; Eric; Kunal; Kalpesh |
| 11 | Update Detail task plan | 1d | 2005-04-26 | 2005-04-26 | 10 | start no earlier than 2005-04-11 | Vinay; Charles |
| 12 | **A dot release modification** | 6d | 2005-04-14 | 2005-04-21 | 5 |  | Vinay; Kunal |
| 13 | Update API | 2d | 2005-04-14 | 2005-04-15 |  |  | Vinay |
| 14 | Test API | 2d | 2005-04-14 | 2005-04-15 |  |  | Kunal |
| 15 | Incorporate in RI | 2d | 2005-04-18 | 2005-04-19 | 13 |  | Kunal |
| 16 | Test RI | 2d | 2005-04-20 | 2005-04-21 | 15 |  | Kunal |
| 19 | Prototype development | 20d | 2005-04-26 | 2005-05-23 |  | start no earlier than 2005-04-26 | Vinay; Kunal |

Removed: 8 Use Case Model

Changed:

| ID | Task | Start | Finish | Duration | Complete | Total float | Predecessors | Other |
| --- | --- | --- | --- | --- | --- | --- | --- | --- |
| 1 | **Security Module (Release four)** | 2004-08-02 A → 2004-09-26 A (+55d) | 2005-03-31 → 2005-05-23 (+53d) | 174d? → 171d? | 92% → 78% |  |  | was named Security Module (Release One) |
| 2 | **Inception** | 2004-08-02 A → 2005-04-01 A (+242d) | 2004-09-22 A → 2005-04-26 (+216d) | 38d → 18d | 100% → 14% | none → 19d |  |  |
| 3 | Phase 3 Evaluation | 2004-08-02 A → 2005-04-04 A (+245d) | 2004-08-10 A → 2005-04-12 (+245d) |  | 100% → 50% | none → 11d |  | was named Phase I Evaluation; resources Vinay; Brian → Vinay |
| 5 | CM configuration | 2004-08-09 A → 2005-04-12 (+246d) | 2004-08-24 A → 2005-04-13 (+232d) | 12d → 2d | 100% → 0% | none → 16d | none → 4 | was named Interview NCICB Team Leads; constraint start no earlier than 2004-08-09 → start no earlier than 2005-04-07; resources Vinay; Brian → Vinay; Kunal |
| 6 | Scope and Vision Document | 2004-08-30 A → 2005-04-01 A (+214d) | 2004-09-10 A → 2005-04-21 (+223d) | 10d → 15d | 100% → 7% | none → 22d |  | constraint start no earlier than 2004-08-30 → finish no earlier than 2005-04-21; resources Brian → Vinay; Eric |
| 7 | Supplentary Specifications | 2004-09-01 A → 2005-04-14 (+225d) | 2004-09-03 A → 2005-04-18 (+227d) |  | 100% → 0% | none → 16d |  |  |
| 9 | Fuctional Specifications | 2004-09-06 A → 2005-04-14 (+220d) | 2004-09-10 A → 2005-04-20 (+222d) |  | 100% → 0% | none → 19d | 7 → 8 |  |
| 10 | Identify Risk List | 2004-09-20 A → 2005-04-21 (+213d) | 2004-09-22 A → 2005-04-25 (+215d) |  | 100% → 0% | none → 19d | Use Case Model → 9 |  |
| 17 | **Elaboration** | 2004-09-27 A → 2004-10-01 A (+4d) | 2004-10-27 → 2005-05-23 (+208d) | 23d? → 167d? | 95% → 50% | 107d → 0d |  |  |
| 18 | **Iteration I** | 2004-09-27 A → 2004-10-01 A (+4d) | 2004-10-13 → 2005-05-23 (+222d) | 13d → 167d | 98% → 27% | 117d → 0d |  |  |
| 20 | Level 1 - 2 Use Cases | 2004-09-27 A → 2005-05-02 (+217d) | 2004-10-01 A → 2005-05-09 (+220d) | 5d → 6d | 100% → 0% | none → 10d |  | constraint none → start no earlier than 2005-05-02 |
| 21 | Risk List Priority | 2004-09-27 A → 2005-05-10 A (+225d) | 2004-09-29 A → 2005-05-12 A (+225d) |  |  |  |  |  |
| 22 | Detailed Iteration Release Plan | 2004-09-27 A → 2005-04-11 A (+196d) | 2004-10-01 → 2005-04-15 (+196d) |  |  | 125d → 26d |  |  |
