# NCICBSecurityService

How a schedule from MS Project changed from version to version. A marks actual dates.

## Version 1 (saved 2004-10-01)

Note of the change: These documents have been added for phase 2

| ID | WBS | Task | Duration | Start | Finish | Predecessors | Total float | Constraint |
| --- | --- | --- | --- | --- | --- | --- | --- | --- |
| 1 | 1 | **Security Module (Release One)** | 156d | 2004-08-02 | 2005-03-07 |  | 0d |  |
| 2 | 1.1 | **Inception** | 38d | 2004-08-02 | 2004-09-22 |  | 118d |  |
| 3 |  | Phase I Evaluation | 7d | 2004-08-02 | 2004-08-10 |  | 149d | start no earlier than 2004-08-02 |
| 4 |  | Interview NCICB Team Leads | 12d | 2004-08-09 | 2004-08-24 |  | 123d | start no earlier than 2004-08-09 |
| 5 |  | Scope and Vision Document | 10d | 2004-08-30 | 2004-09-10 |  | 126d | start no earlier than 2004-08-30 |
| 6 |  | Supplentary Specifications | 3d | 2004-09-01 | 2004-09-03 | 4 | 118d | start no earlier than 2004-09-01 |
| 7 |  | Fuctional Specifications | 5d | 2004-09-06 | 2004-09-10 | 6 | 118d |  |
| 8 |  | Use Case Model | 5d | 2004-09-13 | 2004-09-17 | 7 | 118d |  |
| 9 |  | Identify Risk List | 3d | 2004-09-20 | 2004-09-22 | 8 | 118d |  |
| 10 | 1.2 | **Elaboration** | 22d | 2004-09-27 | 2004-10-26 |  | 94d |  |
| 11 | 1.2.1 | **Iteration I** | 6d | 2004-09-27 | 2004-10-04 |  | 110d |  |
| 12 |  | Level 1 - 2 Use Cases | 5d | 2004-09-27 | 2004-10-01 |  | 111d |  |
| 13 |  | Risk List Priority | 3d | 2004-09-27 | 2004-09-29 |  | 113d |  |
| 14 |  | Detailed Iteration Release Plan | 5d | 2004-09-27 | 2004-10-01 |  | 111d |  |
| 15 | 1.2.1.4 | **Finalize Requirements** | 2d | 2004-10-01 | 2004-10-04 |  | 110d |  |
| 16 |  | Stakeholder Sign Off | 1d | 2004-10-01 | 2004-10-01 |  | 110d | start no earlier than 2004-10-01 |
| 17 |  | User Sign Off | 1d | 2004-10-04 | 2004-10-04 | 16 | 110d | start no earlier than 2004-10-04 |
| 18 | 1.2.2 | **Iteration II** | 16d | 2004-10-05 | 2004-10-26 |  | 94d |  |
| 19 |  | Software Architecture Document | 15d | 2004-10-05 | 2004-10-25 |  | 94d | start no earlier than 2004-10-05 |
| 20 |  | Prioritize Risk List | 1d | 2004-10-26 | 2004-10-26 | 19 | 94d |  |
| 21 | 1.3 | **Construction** | 89d | 2004-10-26 | 2005-02-25 |  | 6d |  |
| 22 | 1.3.1 | **Iteration I** | 25d | 2004-10-26 | 2004-11-29 |  | 70d |  |
| 23 |  | Iteration Plan | 1d | 2004-10-26 | 2004-10-26 |  | 94d | start no earlier than 2004-10-26 |
| 24 | 1.3.1.2 | **Authentication** | 24d | 2004-10-27 | 2004-11-29 |  | 70d |  |
| 25 | 1.3.1.2.1 | **Design** | 4d | 2004-10-27 | 2004-11-01 |  | 76d |  |
| 26 | 1.3.1.2.1.1 | **Documentation** | 4d | 2004-10-27 | 2004-11-01 |  | 76d |  |
| 27 |  | Level 3 - 4 Use Cases | 1d | 2004-10-27 | 2004-10-27 |  | 93d | start no earlier than 2004-10-27 |
| 28 |  | Use Case Model | 1d | 2004-10-27 | 2004-10-27 |  | 91d | start no earlier than 2004-10-27 |
| 29 |  | UML Sequence Diagram | 1d | 2004-10-28 | 2004-10-28 | 28 | 91d |  |
| 30 |  | UML Class Diagram | 1d | 2004-10-29 | 2004-10-29 | 29 | 91d |  |
| 31 |  | UML Activity Diagram | 1d | 2004-10-29 | 2004-10-29 |  | 74d | start no earlier than 2004-10-29 |
| 32 |  | Design Review | 1d | 2004-11-01 | 2004-11-01 | 31 | 74d |  |
| 33 | 1.3.1.2.2 | **Implementation** | 16d | 2004-11-01 | 2004-11-22 |  | 75d |  |
| 34 |  | Data Model Enhancement | 5d | 2004-11-01 | 2004-11-05 |  | 86d | start no earlier than 2004-11-01 |
| 35 | 1.3.1.2.2.2 | **JAAS Authentication Modules** | 11d | 2004-11-08 | 2004-11-22 |  | 70d |  |
| 36 |  | LDAP | 5d | 2004-11-08 | 2004-11-12 | 32 | 70d | finish no earlier than 2004-11-12 |
| 37 |  | RBDMS | 5d | 2004-11-08 | 2004-11-12 | 32 | 70d | finish no earlier than 2004-11-12 |
| 38 |  | Junit Test Development | 4d | 2004-11-09 | 2004-11-12 |  | 70d | finish no earlier than 2004-11-12 |
| 39 |  | Code Reviews | 6d | 2004-11-15 | 2004-11-22 | 36, 37, 38 | 70d | finish no earlier than 2004-11-15 |
| 40 | 1.3.1.2.3 | **Unit Testing** | 5d | 2004-11-23 | 2004-11-29 |  | 70d |  |
| 41 |  | Perform Testing | 1d | 2004-11-23 | 2004-11-23 | 39 | 70d | start no earlier than 2004-11-15 |
| 42 |  | Evaluate Results | 2d | 2004-11-24 | 2004-11-25 | 41 | 70d | start no earlier than 2004-11-16 |
| 43 |  | Integration Testing | 1d | 2004-11-26 | 2004-11-26 | 42 | 70d |  |
| 44 |  | User Working Group Review | 1d | 2004-11-29 | 2004-11-29 | 43 | 70d |  |
| 45 | 1.3.2 | **Iteration II** | 22d | 2004-11-22 | 2004-12-21 |  | 54d |  |
| 46 |  | Iteration Plan | 1d | 2004-11-30 | 2004-11-30 |  | 68d | start no earlier than 2004-11-30 |
| 47 | 1.3.2.2 | **Authorization** | 22d | 2004-11-22 | 2004-12-21 |  | 54d |  |
| 48 | 1.3.2.2.1 | **Design** | 8d | 2004-11-22 | 2004-12-01 |  | 68d |  |
| 49 | 1.3.2.2.1.1 | **Documentation** | 8d | 2004-11-22 | 2004-12-01 |  | 68d |  |
| 50 |  | Level 3 - 4 Use Cases | 1d | 2004-12-01 | 2004-12-01 |  | 68d | start no earlier than 2004-12-01 |
| 51 |  | Use Case Model | 1d | 2004-12-01 | 2004-12-01 | 46 | 68d | start no earlier than 2004-11-22 |
| 52 |  | UML Sequence Diagram | 1d | 2004-11-22 | 2004-11-22 |  | 74d | start no earlier than 2004-11-22 |
| 53 |  | UML Class Diagram | 1d | 2004-11-23 | 2004-11-23 | 52 | 74d |  |
| 54 |  | UML Activity Diagram | 1d | 2004-11-23 | 2004-11-23 |  | 73d | start no earlier than 2004-11-23 |
| 55 |  | Design Review | 1d | 2004-11-24 | 2004-11-24 | 54 | 73d |  |
| 56 | 1.3.2.2.2 | **Implementation** | 15d | 2004-11-25 | 2004-12-15 |  | 58d |  |
| 57 |  | Authorization XML Schema | 10d | 2004-11-25 | 2004-12-08 |  | 63d | start no earlier than 2004-11-25 |
| 58 | 1.3.2.2.2.2 | **Authorization API** | 15d | 2004-11-25 | 2004-12-15 |  | 58d |  |
| 59 |  | Enhance Phase I Object Model | 15d | 2004-11-25 | 2004-12-15 |  | 58d | start no earlier than 2004-11-25 |
| 60 |  | Junit Test Development | 3d | 2004-12-13 | 2004-12-15 |  | 58d | start no earlier than 2004-12-13 |
| 61 | 1.3.2.2.3 | **Unit Testing** | 5d | 2004-12-15 | 2004-12-21 |  | 54d |  |
| 62 |  | Unit Testing | 1d | 2004-12-15 | 2004-12-15 |  | 54d | start no earlier than 2004-12-15 |
| 63 |  | Evaluate Results | 2d | 2004-12-16 | 2004-12-17 | 62 | 54d |  |
| 64 |  | Integration Testing | 1d | 2004-12-20 | 2004-12-20 | 63 | 54d |  |
| 65 |  | User Working Group Review | 1d | 2004-12-21 | 2004-12-21 | 64 | 54d |  |
| 66 | 1.3.3 | **Iteration III** | 26d | 2004-12-21 | 2005-01-25 |  | 29d |  |
| 67 |  | Iteration Plan | 1d | 2004-12-21 | 2004-12-21 |  | 34d | start no earlier than 2004-12-21 |
| 68 | 1.3.3.2 | **Prototype (Reference Implementation)** | 25d | 2004-12-22 | 2005-01-25 |  | 29d |  |
| 69 | 1.3.3.2.1 | **Implementation** | 20d | 2004-12-22 | 2005-01-18 |  | 34d |  |
| 70 | 1.3.3.2.1.1 | **Demo Application** | 20d | 2004-12-22 | 2005-01-18 |  | 34d |  |

| ID | WBS | Task | Duration | Start | Finish | Predecessors | Total float | Constraint |
| --- | --- | --- | --- | --- | --- | --- | --- | --- |
| 71 |  | Integrate Authentication | 5d | 2004-12-22 | 2004-12-28 | 67 | 34d | start no earlier than 2004-12-22 |
| 72 |  | Integrate Authorization | 5d | 2004-12-29 | 2005-01-04 | 71 | 34d |  |
| 73 |  | User Interface | 10d | 2005-01-05 | 2005-01-18 | 72 | 34d |  |
| 74 | 1.3.3.2.2 | **Documentation** | 5d | 2005-01-19 | 2005-01-25 |  | 29d |  |
| 75 |  | User Guide | 5d | 2005-01-19 | 2005-01-25 |  | 29d | start no earlier than 2005-01-19 |
| 76 | 1.3.4 | **Iteration IV** | 49d | 2004-12-21 | 2005-02-25 |  | 6d |  |
| 77 |  | Iteration Plan | 2d | 2004-12-21 | 2004-12-22 |  | 50d | start no earlier than 2004-12-21 |
| 78 | 1.3.4.2 | **User Provisioning** | 47d | 2004-12-23 | 2005-02-25 |  | 6d |  |
| 79 | 1.3.4.2.1 | **Design** | 3d | 2004-12-23 | 2004-12-27 |  | 50d |  |
| 80 | 1.3.4.2.1.1 | **Documentation** | 3d | 2004-12-23 | 2004-12-27 |  | 50d |  |
| 81 |  | Level 3 - 4 Use Cases | 1d | 2004-12-23 | 2004-12-23 | 77 | 50d | start no earlier than 2004-12-23 |
| 82 |  | Use Case Model | 1d | 2004-12-23 | 2004-12-23 | 77 | 50d | start no earlier than 2004-12-17 |
| 83 |  | UML Sequence Diagram | 1d | 2004-12-24 | 2004-12-24 | 82 | 50d |  |
| 84 |  | UML Class Diagram | 1d | 2004-12-27 | 2004-12-27 | 83 | 50d |  |
| 85 |  | UML Activity Diagram | 1d | 2004-12-24 | 2004-12-24 | 81 | 50d |  |
| 86 |  | Design Review | 1d | 2004-12-27 | 2004-12-27 | 85 | 50d |  |
| 87 | 1.3.4.2.2 | **Implementation** | 34d | 2004-12-28 | 2005-02-11 |  | 16d |  |
| 88 |  | Add Users | 5d | 2004-12-28 | 2005-01-03 |  | 16d | start no earlier than 2004-12-28 |
| 89 |  | Modify Users | 3d | 2005-01-04 | 2005-01-06 | 88 | 16d | start no earlier than 2005-01-04 |
| 90 |  | Create Roles | 5d | 2005-01-07 | 2005-01-13 | 89 | 16d |  |
| 91 |  | Assign Roles | 3d | 2005-01-14 | 2005-01-18 | 90 | 16d | start no earlier than 2005-01-11 |
| 92 |  | Assign Privileges | 3d | 2005-01-19 | 2005-01-21 | 91 | 16d |  |
| 93 |  | Create Protection Elements | 3d | 2005-01-24 | 2005-01-26 | 92 | 16d |  |
| 94 |  | Assign Protection Elements | 3d | 2005-01-27 | 2005-01-31 | 93 | 16d |  |
| 95 |  | Web Interface | 7d | 2005-02-01 | 2005-02-09 | 94 | 16d | start no earlier than 2004-11-25 |
| 96 |  | Validation | 2d | 2005-02-10 | 2005-02-11 | 95 | 16d |  |
| 97 |  | Code Reviews | 25d | 2005-01-10 | 2005-02-11 |  | 9d | finish no earlier than 2005-02-11 |
| 98 | 1.3.4.2.3 | **Unit Testing** | 7d | 2005-02-14 | 2005-02-22 |  | 9d |  |
| 99 |  | Perform Testing | 3d | 2005-02-14 | 2005-02-16 | 97 | 9d | start no earlier than 2004-12-15 |
| 100 |  | Evaluate Results | 2d | 2005-02-17 | 2005-02-18 | 99 | 9d |  |
| 101 |  | Integration Testing | 1d | 2005-02-21 | 2005-02-21 | 100 | 9d |  |
| 102 |  | User Working Group Review | 1d | 2005-02-22 | 2005-02-22 | 101 | 9d |  |
| 103 |  | User Guide | 10d | 2005-02-14 | 2005-02-25 |  | 6d | start no earlier than 2005-02-14 |
| 104 | 1.4 | **Transition** | 41d | 2005-01-10 | 2005-03-07 |  | 0d |  |
| 105 | 1.4.1 | **Iteration I** | 27d | 2005-01-10 | 2005-02-15 |  | 14d |  |
| 106 |  | System Integration Document | 12d | 2005-01-10 | 2005-01-25 |  | 29d | start no earlier than 2005-01-10 |
| 107 | 1.4.1.2 | **Integration Pilot (Release One)** | 25d | 2005-01-12 | 2005-02-15 |  | 14d |  |
| 108 | 1.4.1.2.1 | **Client Implementation** | 9d | 2005-01-12 | 2005-01-24 |  | 30d |  |
| 109 |  | Design | 2d | 2005-01-12 | 2005-01-13 |  | 30d | start no earlier than 2005-01-12 |
| 110 |  | Development | 5d | 2005-01-14 | 2005-01-20 | 109 | 30d |  |
| 111 |  | Testing | 2d | 2005-01-21 | 2005-01-24 | 110 | 30d |  |
| 112 |  | Integration Testing | 10d | 2005-01-25 | 2005-02-07 |  | 14d | start no earlier than 2005-01-25 |
| 113 |  | Evaluate Results | 1d | 2005-02-08 | 2005-02-08 | 112 | 14d |  |
| 114 |  | Apply Needed Enhancements | 5d | 2005-02-09 | 2005-02-15 | 113 | 14d |  |
| 115 | 1.4.2 | **Iteration II** | 10d | 2005-02-15 | 2005-02-28 |  | 5d |  |
| 116 |  | Staging | 5d | 2005-02-15 | 2005-02-21 |  | 10d | start no earlier than 2005-02-15 |
| 117 |  | Testing | 6d | 2005-02-21 | 2005-02-28 |  | 5d | start no earlier than 2005-02-21 |
| 118 |  | caCore Release 3 | 1d | 2005-03-07 | 2005-03-07 |  | 0d | start no earlier than 2005-03-07 |

## Version 2 (saved 2004-10-07)

Note of the change: Revised Dates for User Provisioning Added caCore Technical Guide and EVS Docs

Last finish stays 2005-03-07.

Added:

| ID | Task | Duration | Start | Finish | Predecessors | Constraint |
| --- | --- | --- | --- | --- | --- | --- |
| 56 | UML Model for EVS | 4d | 2004-12-07 | 2004-12-10 |  | start no earlier than 2004-12-07 |
| 108 | caCore Technical Guide | 8d | 2005-01-26 | 2005-02-04 | 107 |  |

Changed:

| ID | Task | Start | Finish | Duration | Total float | Other |
| --- | --- | --- | --- | --- | --- | --- |
| 21 | **Construction** | 2004-10-26 → 2004-10-18 (-8d) | 2005-02-25 → 2005-01-25 (-31d) | 89d → 72d | 6d → 29d |  |
| 48 | **Design** |  | 2004-12-01 → 2004-12-10 (+9d) | 8d → 15d | 68d → 61d |  |
| 49 | **Documentation** |  | 2004-12-01 → 2004-12-10 (+9d) | 8d → 15d | 68d → 61d |  |
| 77 | **Iteration IV** | 2004-12-21 → 2004-10-18 (-64d) | 2005-02-25 → 2005-01-14 (-42d) | 49d → 65d | 6d → 36d | resources none → Brian |
| 78 | Iteration Plan | 2004-12-21 → 2004-10-18 (-64d) | 2004-12-22 → 2004-10-19 (-64d) |  | 50d → 96d | constraint start no earlier than 2004-12-21 → start no earlier than 2004-10-18; resources none → Brian |
| 79 | **User Provisioning** | 2004-12-23 → 2004-10-20 (-64d) | 2005-02-25 → 2005-01-14 (-42d) | 47d → 63d | 6d → 36d | resources none → Brian |
| 80 | **Design** | 2004-12-23 → 2004-10-20 (-64d) | 2004-12-27 → 2004-12-21 (-6d) | 3d → 45d | 50d → 54d | resources none → Brian |
| 81 | **Documentation** | 2004-12-23 → 2004-10-20 (-64d) | 2004-12-27 → 2004-12-21 (-6d) | 3d → 45d | 50d → 54d | resources none → Brian |
| 82 | Level 3 - 4 Use Cases | 2004-12-23 → 2004-10-20 (-64d) | 2004-12-23 → 2004-10-20 (-64d) |  | 50d → 96d | constraint start no earlier than 2004-12-23 → start no earlier than 2004-10-20; resources none → Brian |
| 83 | Use Case Model | 2004-12-23 → 2004-12-17 (-6d) | 2004-12-23 → 2004-12-17 (-6d) |  | 50d → 54d | resources none → Brian |
| 84 | UML Sequence Diagram | 2004-12-24 → 2004-12-20 (-4d) | 2004-12-24 → 2004-12-20 (-4d) |  | 50d → 54d | resources none → Brian |
| 85 | UML Class Diagram | 2004-12-27 → 2004-12-21 (-6d) | 2004-12-27 → 2004-12-21 (-6d) |  | 50d → 54d | resources none → Brian |
| 86 | UML Activity Diagram | 2004-12-24 → 2004-10-21 (-64d) | 2004-12-24 → 2004-10-21 (-64d) |  | 50d → 96d | resources none → Brian |
| 87 | Design Review | 2004-12-27 → 2004-10-22 (-66d) | 2004-12-27 → 2004-10-22 (-66d) |  | 50d → 96d | resources none → Brian |
| 88 | **Implementation** | 2004-12-28 → 2004-10-25 (-64d) | 2005-02-11 → 2004-12-16 (-57d) | 34d → 39d | 16d → 57d | resources none → Brian |
| 89 | Add Users | 2004-12-28 → 2004-10-25 (-64d) | 2005-01-03 → 2004-10-29 (-66d) |  | 16d → 57d | constraint start no earlier than 2004-12-28 → start no earlier than 2004-10-25; resources none → Brian |
| 90 | Modify Users | 2005-01-04 → 2004-11-01 (-64d) | 2005-01-06 → 2004-11-03 (-64d) |  | 16d → 57d | constraint start no earlier than 2005-01-04 → start no earlier than 2004-11-01; resources none → Brian |
| 91 | Create Roles | 2005-01-07 → 2004-11-04 (-64d) | 2005-01-13 → 2004-11-10 (-64d) |  | 16d → 57d | resources none → Brian |
| 92 | Assign Roles | 2005-01-14 → 2004-11-11 (-64d) | 2005-01-18 → 2004-11-15 (-64d) |  | 16d → 57d | constraint start no earlier than 2005-01-11 → start no earlier than 2004-11-11; resources none → Brian |
| 93 | Assign Privileges | 2005-01-19 → 2004-11-16 (-64d) | 2005-01-21 → 2004-11-18 (-64d) |  | 16d → 57d | resources none → Brian |
| 94 | Create Protection Elements | 2005-01-24 → 2004-11-19 (-66d) | 2005-01-26 → 2004-11-23 (-64d) |  | 16d → 57d | resources none → Brian |
| 95 | Assign Protection Elements | 2005-01-27 → 2004-11-24 (-64d) | 2005-01-31 → 2004-11-26 (-66d) |  | 16d → 57d | resources none → Brian |
| 96 | Web Interface | 2005-02-01 → 2004-11-29 (-64d) | 2005-02-09 → 2004-12-14 (-57d) | 7d → 12d | 16d → 57d | resources none → Brian |
| 97 | Validation | 2005-02-10 → 2004-12-15 (-57d) | 2005-02-11 → 2004-12-16 (-57d) |  | 16d → 57d | resources none → Brian |
| 98 | Code Reviews | 2005-01-10 → 2004-11-05 (-66d) | 2005-02-11 → 2004-12-16 (-57d) | 25d → 30d | 9d → 50d | constraint finish no earlier than 2005-02-11 → finish no earlier than 2004-12-16; resources none → Brian |
| 99 | **Unit Testing** | 2005-02-14 → 2004-12-17 (-59d) | 2005-02-22 → 2004-12-27 (-57d) |  | 9d → 50d | resources none → Brian |
| 100 | Perform Testing | 2005-02-14 → 2004-12-17 (-59d) | 2005-02-16 → 2004-12-21 (-57d) |  | 9d → 50d | resources none → Brian |
| 101 | Evaluate Results | 2005-02-17 → 2004-12-22 (-57d) | 2005-02-18 → 2004-12-23 (-57d) |  | 9d → 50d | resources none → Brian |
| 102 | Integration Testing | 2005-02-21 → 2004-12-24 (-59d) | 2005-02-21 → 2004-12-24 (-59d) |  | 9d → 50d | resources none → Brian |
| 103 | User Working Group Review | 2005-02-22 → 2004-12-27 (-57d) | 2005-02-22 → 2004-12-27 (-57d) |  | 9d → 50d | resources none → Brian |
| 104 | User Guide | 2005-02-14 → 2005-01-03 (-42d) | 2005-02-25 → 2005-01-14 (-42d) |  | 6d → 36d | constraint start no earlier than 2005-02-14 → start no earlier than 2005-01-03; resources none → Brian |

## Version 3 (saved 2004-10-11)

Note of the change: assigned resource names for Brian modified dates

Last finish stays 2005-03-07.

Added:

| ID | Task | Duration | Start | Finish | Predecessors |
| --- | --- | --- | --- | --- | --- |
| 29 | Working Group Use Case Review | 1d | 2004-10-28 | 2004-10-28 | 28 |
| 53 | User Working Group Review | 1d | 2004-12-02 | 2004-12-02 | 52 |
| 86 | Use Case Working Group Review | 1d | 2004-10-21 | 2004-10-21 | 85 |

Changed:

| ID | Task | Start | Finish | Duration | Total float | Predecessors | Other |
| --- | --- | --- | --- | --- | --- | --- | --- |
| 11 | **Iteration I** |  | 2004-10-04 → 2004-10-13 (+9d) | 6d → 13d | 110d → 103d |  |  |
| 15 | **Finalize Requirements** |  | 2004-10-04 → 2004-10-13 (+9d) | 2d → 9d | 110d → 103d |  |  |
| 17 | User Working Group Review | 2004-10-04 → 2004-10-13 (+9d) | 2004-10-04 → 2004-10-13 (+9d) |  | 110d → 103d |  | was named User Sign Off; constraint start no earlier than 2004-10-04 → start no earlier than 2004-10-13 |
| 30 | UML Sequence Diagram | 2004-10-28 → 2004-10-29 (+1d) | 2004-10-28 → 2004-10-29 (+1d) |  | 91d → 90d | 28 → 29 |  |
| 31 | UML Class Diagram | 2004-10-29 → 2004-11-01 (+3d) | 2004-10-29 → 2004-11-01 (+3d) |  | 91d → 90d |  |  |
| 33 | Design Review |  |  |  |  |  | resources none → Brian |
| 40 | Code Reviews |  |  |  |  |  | resources none → Brian |
| 46 | **Iteration II** | 2004-11-22 → 2004-11-30 (+8d) | 2004-12-21 → 2005-01-21 (+31d) | 22d → 39d | 54d → 31d |  |  |
| 48 | **Authorization** | 2004-11-22 → 2004-12-01 (+9d) | 2004-12-21 → 2005-01-21 (+31d) | 22d → 38d | 54d → 31d |  |  |
| 49 | **Design** | 2004-11-22 → 2004-12-01 (+9d) | 2004-12-10 → 2004-12-08 (-2d) | 15d → 6d | 61d → 63d |  |  |
| 50 | **Documentation** | 2004-11-22 → 2004-12-01 (+9d) | 2004-12-10 → 2004-12-08 (-2d) | 15d → 6d | 61d → 63d |  |  |
| 54 | UML Sequence Diagram | 2004-11-22 → 2004-12-03 (+11d) | 2004-11-22 → 2004-12-03 (+11d) |  | 74d → 65d | none → 53 | constraint start no earlier than 2004-11-22 → none |
| 55 | UML Class Diagram | 2004-11-23 → 2004-12-06 (+13d) | 2004-11-23 → 2004-12-06 (+13d) |  | 74d → 65d |  |  |
| 56 | UML Activity Diagram | 2004-11-23 → 2004-12-06 (+13d) | 2004-11-23 → 2004-12-06 (+13d) |  | 73d → 64d |  | constraint start no earlier than 2004-11-23 → start no earlier than 2004-12-06 |
| 57 | Design Review | 2004-11-24 → 2004-12-07 (+13d) | 2004-11-24 → 2004-12-07 (+13d) |  | 73d → 64d |  | resources none → Brian |
| 58 | UML Model for EVS |  | 2004-12-10 → 2004-12-08 (-2d) | 4d → 2d | 61d → 63d |  |  |
| 59 | **Implementation** | 2004-11-25 → 2004-12-09 (+14d) | 2004-12-15 → 2005-01-13 (+29d) | 15d → 26d | 58d → 37d |  |  |
| 60 | Authorization XML Schema | 2004-11-25 → 2004-12-09 (+14d) | 2004-12-08 → 2004-12-22 (+14d) |  | 63d → 53d |  | constraint start no earlier than 2004-11-25 → start no earlier than 2004-12-09 |
| 61 | **Authorization API** | 2004-11-25 → 2004-12-23 (+28d) | 2004-12-15 → 2005-01-13 (+29d) | 15d → 16d | 58d → 37d |  |  |
| 62 | Enhance Phase I Object Model | 2004-11-25 → 2004-12-23 (+28d) | 2004-12-15 → 2005-01-12 (+28d) |  | 58d → 37d |  | constraint start no earlier than 2004-11-25 → start no earlier than 2004-12-23 |
| 63 | Junit Test Development | 2004-12-13 → 2005-01-13 (+31d) | 2004-12-15 → 2005-01-13 (+29d) | 3d → 1d | 58d → 37d | none → 62 | constraint start no earlier than 2004-12-13 → finish no earlier than 2005-01-13 |
| 64 | **Unit Testing** | 2004-12-15 → 2005-01-14 (+30d) | 2004-12-21 → 2005-01-21 (+31d) | 5d → 6d | 54d → 31d |  |  |
| 65 | Unit Testing | 2004-12-15 → 2005-01-14 (+30d) | 2004-12-15 → 2005-01-17 (+33d) | 1d → 2d | 54d → 31d |  | constraint start no earlier than 2004-12-15 → start no earlier than 2005-01-14 |
| 66 | Evaluate Results | 2004-12-16 → 2005-01-18 (+33d) | 2004-12-17 → 2005-01-19 (+33d) |  | 54d → 31d |  |  |
| 67 | Integration Testing | 2004-12-20 → 2005-01-20 (+31d) | 2004-12-20 → 2005-01-20 (+31d) |  | 54d → 31d |  |  |
| 68 | User Working Group Review | 2004-12-21 → 2005-01-21 (+31d) | 2004-12-21 → 2005-01-21 (+31d) |  | 54d → 31d |  |  |
| 82 | **Design** |  | 2004-12-21 → 2004-10-26 (-56d) | 45d → 5d | 54d → 94d |  |  |
| 83 | **Documentation** |  | 2004-12-21 → 2004-10-26 (-56d) | 45d → 5d | 54d → 94d |  |  |
| 85 | Use Case Model | 2004-12-17 → 2004-10-20 (-58d) | 2004-12-17 → 2004-10-20 (-58d) |  | 54d → 95d |  | constraint start no earlier than 2004-12-17 → start no earlier than 2004-10-20 |
| 87 | UML Sequence Diagram | 2004-12-20 → 2004-10-22 (-59d) | 2004-12-20 → 2004-10-22 (-59d) |  | 54d → 95d | 85 → 86 |  |
| 88 | UML Class Diagram | 2004-12-21 → 2004-10-25 (-57d) | 2004-12-21 → 2004-10-25 (-57d) |  | 54d → 95d |  |  |
| 89 | UML Activity Diagram | 2004-10-21 → 2004-10-25 (+4d) | 2004-10-21 → 2004-10-25 (+4d) |  | 96d → 94d | 84 → none | constraint none → start no earlier than 2004-10-25 |
| 90 | Design Review | 2004-10-22 → 2004-10-26 (+4d) | 2004-10-22 → 2004-10-26 (+4d) |  | 96d → 94d |  |  |
| 101 | Code Reviews |  |  |  |  |  | resources Brian → Vinay |

## Version 4 (saved 2004-10-12)

Note of the change: Revised Resource Assignment

Last finish stays 2005-03-07.

Added:

| ID | Task | Duration | Start | Finish | Predecessors | Resources |
| --- | --- | --- | --- | --- | --- | --- |
| 20 | Architecture Review | 1d? | 2004-10-26 | 2004-10-26 | 19 | Brian; Kalpesh |

Changed:

| ID | Task | Start | Finish | Duration | Total float | Predecessors | Other |
| --- | --- | --- | --- | --- | --- | --- | --- |
| 1 | **Security Module (Release One)** |  |  | 156d → 156d? |  |  |  |
| 3 | Phase I Evaluation |  |  |  |  |  | resources none → Vinay; Brian |
| 4 | Interview NCICB Team Leads |  |  |  |  |  | resources none → Vinay; Brian |
| 5 | Scope and Vision Document |  |  |  |  |  | resources none → Brian |
| 6 | Supplentary Specifications |  |  |  |  |  | resources none → Vinay |
| 7 | Fuctional Specifications |  |  |  |  |  | resources none → Vinay |
| 8 | Use Case Model |  |  |  |  |  | resources none → Vinay |
| 9 | Identify Risk List |  |  |  |  |  | resources none → Kalpesh |
| 10 | **Elaboration** |  |  | 22d → 22d? |  |  |  |
| 12 | Level 1 - 2 Use Cases |  |  |  |  |  | resources none → Vinay |
| 13 | Risk List Priority |  |  |  |  |  | resources none → Vinay |
| 14 | Detailed Iteration Release Plan |  |  |  |  |  | resources none → Vinay; Brian |
| 17 | User Working Group Review |  |  |  |  |  | resources none → Kalpesh |
| 18 | **Iteration II** |  |  | 16d → 16d? |  |  |  |
| 19 | Software Architecture Document |  |  |  |  |  | constraint start no earlier than 2004-10-05 → finish no earlier than 2004-10-25; resources none → Vinay; Kunal |
| 21 | Prioritize Risk List |  |  |  |  | 19 → none | constraint none → start no earlier than 2004-10-26; resources none → Vinay |
| 22 | **Construction** |  | 2005-01-25 → 2005-01-28 (+3d) | 72d → 75d | 29d → 26d |  |  |
| 23 | **Iteration I** |  | 2004-11-29 → 2004-11-22 (-7d) | 25d → 20d | 70d → 69d |  |  |
| 24 | Iteration Plan |  |  |  |  |  | resources none → Vinay; Kunal |
| 25 | **Authentication** |  | 2004-11-29 → 2004-11-22 (-7d) | 24d → 19d | 70d → 68d |  |  |
| 28 | Level 3 - 4 Use Cases |  |  | 1d → 0.5d | 93d → 90d |  | resources none → Kunal; Vinay |
| 29 | Use Case Model |  |  | 1d → 0.5d | 91d → 90d | none → 28 | resources none → Vinay; Kunal |
| 30 | Working Group Use Case Review |  |  |  |  |  | resources none → Kalpesh |
| 31 | UML Sequence Diagram |  |  |  |  |  | resources none → Kunal |
| 32 | UML Class Diagram |  |  |  |  |  | resources none → Vinay |
| 33 | UML Activity Diagram |  |  |  | 74d → 79d |  | resources none → Vinay |
| 35 | **Implementation** |  | 2004-11-22 → 2004-11-15 (-7d) | 16d → 11d | 75d → 65d |  |  |
| 36 | Data Model Enhancement |  |  |  | 86d → 65d |  | resources none → Vinay; Kalpesh |
| 37 | **JAAS Authentication Modules** | 2004-11-08 → 2004-11-02 (-6d) | 2004-11-22 → 2004-11-15 (-7d) | 11d → 10d | 70d → 75d |  |  |
| 38 | LDAP | 2004-11-08 → 2004-11-02 (-6d) | 2004-11-12 → 2004-11-08 (-4d) |  | 70d → 79d |  | constraint finish no earlier than 2004-11-12 → start no earlier than 2004-11-02; resources none → Kunal |
| 39 | RBDMS |  |  |  | 70d → 75d |  | resources none → Vinay |
| 40 | Junit Test Development | 2004-11-09 → 2004-11-11 (+2d) |  | 4d → 2d | 70d → 75d |  | resources none → Kunal; Vinay |
| 41 | Code Reviews |  | 2004-11-22 → 2004-11-15 (-7d) | 6d → 1d | 70d → 75d |  |  |
| 42 | **Unit Testing** | 2004-11-23 → 2004-11-16 (-7d) | 2004-11-29 → 2004-11-22 (-7d) |  | 70d → 75d |  |  |
| 43 | Perform Testing | 2004-11-23 → 2004-11-16 (-7d) | 2004-11-23 → 2004-11-16 (-7d) |  | 70d → 75d |  | resources none → Kunal |
| 44 | Evaluate Results | 2004-11-24 → 2004-11-17 (-7d) | 2004-11-25 → 2004-11-18 (-7d) |  | 70d → 75d |  | resources none → Kunal |
| 45 | Integration Testing | 2004-11-26 → 2004-11-19 (-7d) | 2004-11-26 → 2004-11-19 (-7d) |  | 70d → 75d |  | resources none → Vinay |
| 46 | User Working Group Review | 2004-11-29 → 2004-11-22 (-7d) | 2004-11-29 → 2004-11-22 (-7d) |  | 70d → 75d |  | resources none → Kalpesh |
| 48 | Iteration Plan |  |  |  | 67d → 60d |  | resources none → Vinay |
| 52 | Level 3 - 4 Use Cases |  |  |  | 68d → 63d |  | resources none → Vinay; Kunal |
| 53 | Use Case Model |  |  |  | 67d → 60d |  | resources none → Kunal |
| 54 | User Working Group Review |  |  |  | 67d → 60d |  | resources none → Kalpesh |
| 55 | UML Sequence Diagram |  |  |  | 65d → 60d |  | resources none → Kunal |
| 56 | UML Class Diagram |  |  |  | 65d → 60d |  | resources none → Vinay |
| 57 | UML Activity Diagram |  |  |  | 64d → 59d |  | resources none → Vinay |
| 61 | Authorization XML Schema |  |  |  | 53d → 48d |  | resources none → Vinay; Brian |
| 63 | Enhance Phase I Object Model |  |  |  | 37d → 32d | none → 36 | resources none → Vinay |
| 64 | Junit Test Development |  |  |  | 37d → 32d |  | resources none → Vinay |
| 66 | Unit Testing |  |  |  | 31d → 26d |  | resources none → Kunal |
| 67 | Evaluate Results |  |  |  | 31d → 26d |  | resources none → Vinay |
| 68 | Integration Testing |  |  |  | 31d → 26d |  | resources none → Vinay |
| 69 | User Working Group Review |  |  |  | 31d → 26d |  | resources none → Kalpesh |
| 70 | **Iteration III** |  | 2005-01-25 → 2005-01-28 (+3d) | 26d → 29d | 29d → 26d |  |  |
| 71 | Iteration Plan |  |  |  | 34d → 39d |  | resources none → Kunal |
| 72 | **Prototype (Reference Implementation)** |  | 2005-01-25 → 2005-01-28 (+3d) | 25d → 28d | 29d → 26d |  |  |
| 73 | **Implementation** |  | 2005-01-18 → 2005-01-28 (+10d) | 20d → 28d | 34d → 26d |  |  |
| 74 | **Demo Application** |  | 2005-01-18 → 2005-01-28 (+10d) | 20d → 28d | 34d → 26d |  |  |
| 75 | Integrate Authentication |  |  |  | 34d → 39d |  | resources none → Kunal |
| 76 | User Interface | 2005-01-05 → 2004-12-29 (-7d) | 2005-01-18 → 2005-01-11 (-7d) |  | 34d → 39d | 77 → 75 | resources none → Kunal |
| 77 | Integrate Authorization | 2004-12-29 → 2005-01-24 (+26d) | 2005-01-04 → 2005-01-28 (+24d) |  | 34d → 26d | 75 → 47 | resources none → Kunal |
| 79 | User Guide |  |  |  |  |  | resources none → Vinay |
| 111 | System Integration Document |  |  |  |  |  | resources none → Vinay |
| 115 | Design |  |  |  |  |  | resources none → Vinay |
| 116 | Development |  |  |  |  |  | resources none → Kunal |
| 117 | Testing |  |  |  |  |  | resources none → Kunal |
| 118 | Integration Testing |  |  |  |  |  | resources none → Vinay |
| 119 | Evaluate Results |  |  |  |  |  | resources none → Vinay |
| 120 | Apply Needed Enhancements |  |  |  |  |  | resources none → Kunal |
| 122 | Staging |  |  |  |  |  | resources none → Vinay |
| 123 | Testing |  |  |  |  |  | resources none → Vinay |

## Version 5 (saved 2004-10-13)

Note of the change: modified dates for user provisioning

Last finish stays 2005-03-07.

Added:

| ID | Task | Duration | Start | Finish | Predecessors |
| --- | --- | --- | --- | --- | --- |
| 87 | Gather Requirements | 5d | 2004-10-21 | 2004-10-27 | 86 |

Removed: 93 Add Users; 94 Modify Users

Changed:

| ID | Task | Start | Finish | Duration | Total float | Predecessors | Other |
| --- | --- | --- | --- | --- | --- | --- | --- |
| 80 | **Iteration IV** |  | 2005-01-14 → 2005-01-20 (+6d) | 65d → 69d | 36d → 32d |  |  |
| 82 | **User Provisioning** |  | 2005-01-14 → 2005-01-20 (+6d) | 63d → 67d | 36d → 32d |  |  |
| 83 | **Design** |  | 2004-10-26 → 2004-11-03 (+8d) | 5d → 11d | 94d → 88d |  |  |
| 84 | **Documentation** |  | 2004-10-26 → 2004-11-03 (+8d) | 5d → 11d | 94d → 88d |  |  |
| 88 | Use Case Working Group Review | 2004-10-21 → 2004-10-28 (+7d) | 2004-10-21 → 2004-10-28 (+7d) |  | 95d → 88d | 86 → 87 |  |
| 89 | UML Sequence Diagram | 2004-10-22 → 2004-10-29 (+7d) | 2004-10-22 → 2004-10-29 (+7d) |  | 95d → 88d |  |  |
| 90 | UML Class Diagram | 2004-10-25 → 2004-11-01 (+7d) | 2004-10-25 → 2004-11-01 (+7d) |  | 95d → 88d |  |  |
| 91 | UML Activity Diagram | 2004-10-25 → 2004-11-02 (+8d) | 2004-10-25 → 2004-11-02 (+8d) |  | 94d → 88d | none → 90 | constraint start no earlier than 2004-10-25 → none |
| 92 | Design Review | 2004-10-26 → 2004-11-03 (+8d) | 2004-10-26 → 2004-11-03 (+8d) |  | 94d → 88d |  |  |
| 93 | **Implementation** | 2004-10-25 → 2004-11-04 (+10d) | 2004-12-16 → 2004-12-20 (+4d) | 39d → 33d | 57d → 53d |  |  |
| 94 | Create Roles |  |  |  |  | Modify Users → none | constraint none → start no earlier than 2004-11-04 |
| 101 | Code Reviews |  | 2004-12-16 → 2004-12-20 (+4d) | 30d → 32d | 50d → 52d |  | constraint finish no earlier than 2004-12-16 → finish no earlier than 2004-12-20 |
| 102 | **Unit Testing** | 2004-12-17 → 2004-12-21 (+4d) | 2004-12-27 → 2005-01-06 (+10d) | 7d → 13d | 50d → 42d |  |  |
| 103 | Perform Testing | 2004-12-17 → 2004-12-21 (+4d) | 2004-12-21 → 2004-12-23 (+2d) |  | 50d → 52d |  |  |
| 104 | Evaluate Results | 2004-12-22 → 2005-01-03 (+12d) | 2004-12-23 → 2005-01-04 (+12d) |  | 50d → 42d | 103 → none | constraint none → start no earlier than 2005-01-03 |
| 105 | Integration Testing | 2004-12-24 → 2005-01-05 (+12d) | 2004-12-24 → 2005-01-05 (+12d) |  | 50d → 42d |  |  |
| 106 | User Working Group Review | 2004-12-27 → 2005-01-06 (+10d) | 2004-12-27 → 2005-01-06 (+10d) |  | 50d → 42d |  |  |
| 107 | User Guide | 2005-01-03 → 2005-01-07 (+4d) | 2005-01-14 → 2005-01-20 (+6d) |  | 36d → 32d |  | constraint start no earlier than 2005-01-03 → start no earlier than 2005-01-07 |

## Version 6 (saved 2004-10-25)

Note of the change: fixed incorrect date

Last finish stays 2005-03-07.

Changed:

| ID | Task | Start | Finish | Duration | Total float | Predecessors | Other |
| --- | --- | --- | --- | --- | --- | --- | --- |
| 22 | **Construction** |  | 2005-01-28 → 2005-01-27 (-1d) | 75d → 74d | 26d → 27d |  |  |
| 23 | **Iteration I** |  | 2004-11-22 → 2004-11-19 (-3d) | 20d → 19d |  |  |  |
| 25 | **Authentication** |  | 2004-11-22 → 2004-11-19 (-3d) | 19d → 18d |  |  |  |
| 40 | Junit Test Development | 2004-11-11 → 2004-11-09 (-2d) |  | 2d → 4d | 75d → 76d |  | resources Kunal; Vinay → Eric |
| 42 | **Unit Testing** |  | 2004-11-22 → 2004-11-19 (-3d) | 5d → 4d | 75d → 76d |  |  |
| 43 | Perform Testing |  |  |  | 75d → 76d |  | resources Kunal → Eric |
| 44 | Evaluate Results |  | 2004-11-18 → 2004-11-17 (-1d) | 2d → 1d | 75d → 76d |  | resources Kunal → Eric; Vinay |
| 45 | Integration Testing | 2004-11-19 → 2004-11-18 (-1d) | 2004-11-19 → 2004-11-18 (-1d) |  | 75d → 76d |  | resources Vinay → Eric |
| 46 | User Working Group Review | 2004-11-22 → 2004-11-19 (-3d) | 2004-11-22 → 2004-11-19 (-3d) |  | 75d → 76d |  |  |
| 47 | **Iteration II** |  | 2005-01-21 → 2005-01-20 (-1d) | 39d → 38d | 26d → 27d |  |  |
| 49 | **Authorization** |  | 2005-01-21 → 2005-01-20 (-1d) | 38d → 37d | 26d → 27d |  |  |
| 64 | Junit Test Development |  |  |  |  |  | resources Vinay → Eric |
| 65 | **Unit Testing** |  | 2005-01-21 → 2005-01-20 (-1d) | 6d → 5d | 26d → 27d |  |  |
| 66 | Unit Testing |  |  |  | 26d → 27d |  | resources Kunal → Eric |
| 67 | Evaluate Results |  | 2005-01-19 → 2005-01-18 (-1d) | 2d → 1d | 26d → 27d |  | resources Vinay → Vinay; Eric |
| 68 | Integration Testing | 2005-01-20 → 2005-01-19 (-1d) | 2005-01-20 → 2005-01-19 (-1d) |  | 26d → 27d |  |  |
| 69 | User Working Group Review | 2005-01-21 → 2005-01-20 (-1d) | 2005-01-21 → 2005-01-20 (-1d) |  | 26d → 27d |  |  |
| 70 | **Iteration III** |  | 2005-01-28 → 2005-01-27 (-1d) | 29d → 28d | 26d → 27d |  |  |
| 72 | **Prototype (Reference Implementation)** |  | 2005-01-28 → 2005-01-27 (-1d) | 28d → 27d | 26d → 27d |  |  |
| 73 | **Implementation** |  | 2005-01-28 → 2005-01-27 (-1d) | 28d → 27d | 26d → 27d |  |  |
| 74 | **Demo Application** |  | 2005-01-28 → 2005-01-27 (-1d) | 28d → 27d | 26d → 27d |  |  |
| 76 | User Interface |  |  |  |  |  | resources Kunal → Eric |
| 77 | Integrate Authorization | 2005-01-24 → 2005-01-21 (-3d) | 2005-01-28 → 2005-01-27 (-1d) |  | 26d → 27d |  |  |
| 83 | **Design** |  | 2004-11-03 → 2004-11-10 (+7d) | 11d → 16d | 88d → 83d |  |  |
| 84 | **Documentation** |  | 2004-11-03 → 2004-11-10 (+7d) | 11d → 16d | 88d → 83d |  |  |
| 85 | Level 3 - 4 Use Cases | 2004-10-20 → 2004-10-27 (+7d) | 2004-10-20 → 2004-10-27 (+7d) |  | 98d → 93d |  | constraint start no earlier than 2004-10-20 → start no earlier than 2004-10-27 |
| 86 | Use Case Model |  | 2004-10-20 → 2004-10-27 (+7d) | 1d → 6d | 95d → 83d |  | constraint start no earlier than 2004-10-20 → finish no earlier than 2004-10-27 |
| 87 | Gather Requirements | 2004-10-21 → 2004-10-28 (+7d) | 2004-10-27 → 2004-11-03 (+7d) |  | 88d → 83d |  |  |
| 88 | Use Case Working Group Review | 2004-10-28 → 2004-11-04 (+7d) | 2004-10-28 → 2004-11-04 (+7d) |  | 88d → 83d |  |  |
| 89 | UML Sequence Diagram | 2004-10-29 → 2004-11-05 (+7d) | 2004-10-29 → 2004-11-05 (+7d) |  | 88d → 83d |  |  |
| 90 | UML Class Diagram | 2004-11-01 → 2004-11-08 (+7d) | 2004-11-01 → 2004-11-08 (+7d) |  | 88d → 83d |  |  |
| 91 | UML Activity Diagram | 2004-11-02 → 2004-11-09 (+7d) | 2004-11-02 → 2004-11-09 (+7d) |  | 88d → 83d |  |  |
| 92 | Design Review | 2004-11-03 → 2004-11-10 (+7d) | 2004-11-03 → 2004-11-10 (+7d) |  | 88d → 83d |  | resources Brian → Vinay |
| 99 | Web Interface | 2004-11-29 → 2004-11-15 (-14d) | 2004-12-14 → 2004-11-30 (-14d) |  | 57d → 67d | 98 → none | constraint start no earlier than 2004-11-25 → start no earlier than 2004-11-15; resources Brian → Eric |
| 100 | Validation | 2004-12-15 → 2004-12-01 (-14d) | 2004-12-16 → 2004-12-02 (-14d) |  | 57d → 67d |  |  |
| 102 | **Unit Testing** |  | 2005-01-06 → 2005-01-05 (-1d) | 13d → 12d | 42d → 43d |  |  |
| 103 | Perform Testing |  |  |  |  |  | resources Brian → Eric |
| 104 | Evaluate Results |  | 2005-01-04 → 2005-01-03 (-1d) | 2d → 1d | 42d → 43d |  | resources Brian → Brian; Eric |
| 105 | Integration Testing | 2005-01-05 → 2005-01-04 (-1d) | 2005-01-05 → 2005-01-04 (-1d) |  | 42d → 43d |  |  |
| 106 | User Working Group Review | 2005-01-06 → 2005-01-05 (-1d) | 2005-01-06 → 2005-01-05 (-1d) |  | 42d → 43d |  |  |
| 109 | **Iteration I** |  | 2005-02-15 → 2005-02-08 (-7d) | 27d → 21.5d | 14d → 19.5d |  |  |
| 112 | **Integration Pilot (Release One)** |  | 2005-02-15 → 2005-02-08 (-7d) | 25d → 19.5d | 14d → 19.5d |  |  |
| 117 | Integration Testing |  | 2005-02-07 → 2005-01-31 (-7d) | 10d → 5d | 14d → 19.5d |  | resources Vinay → Vinay; Eric |
| 118 | Evaluate Results | 2005-02-08 → 2005-02-01 (-7d) | 2005-02-08 → 2005-02-01 (-7d) | 1d → 0.5d | 14d → 19.5d |  | resources Vinay → Vinay; Eric |
| 119 | Apply Needed Enhancements | 2005-02-09 → 2005-02-01 (-8d) | 2005-02-15 → 2005-02-08 (-7d) |  | 14d → 19.5d |  |  |
| 120 | **Iteration II** |  | 2005-02-28 → 2005-02-23 (-5d) | 10d → 7d | 5d → 8d |  |  |
| 122 | Testing |  | 2005-02-28 → 2005-02-23 (-5d) | 6d → 3d | 5d → 8d |  | resources Vinay → Vinay; Eric |

## Version 7 (saved 2004-10-26)

Note of the change: minor revision to user prov

Last finish stays 2005-03-07.

Added:

| ID | Task | Duration | Start | Finish | Predecessors | Resources |
| --- | --- | --- | --- | --- | --- | --- |
| 95 | Modify Roles | 2d | 2004-11-11 | 2004-11-12 | 94 | Brian |
| 96 | Create Privileges | 2d | 2004-11-15 | 2004-11-16 | 95 | Brian |
| 97 | Modify Privileges | 2d | 2004-11-17 | 2004-11-18 | 96 | Brian |
| 100 | Modify Protection Elements | 2d | 2004-11-25 | 2004-11-26 | 99 | Brian |
| 101 | Create Protection Group | 2d | 2004-11-29 | 2004-11-30 | 100 | Brian |
| 102 | Modify Protection Group | 2d | 2004-12-01 | 2004-12-02 | 101 | Brian |
| 104 | Assign Protection Elements to Users | 2d | 2004-12-07 | 2004-12-08 | 103 | Brian |
| 105 | Assign Protection Group to User Roles | 2d | 2004-12-09 | 2004-12-10 | 104 | Brian |

Removed: 95 Assign Roles

Changed:

| ID | Task | Start | Finish | Duration | Total float | Predecessors | Other |
| --- | --- | --- | --- | --- | --- | --- | --- |
| 80 | **Iteration IV** |  | 2005-01-20 → 2005-01-13 (-7d) | 69d → 64d | 32d → 37d |  |  |
| 82 | **User Provisioning** |  | 2005-01-20 → 2005-01-13 (-7d) | 67d → 62d | 32d → 37d |  |  |
| 98 | Assign Privileges to Roles | 2004-11-16 → 2004-11-19 (+3d) | 2004-11-18 → 2004-11-22 (+4d) | 3d → 2d | 71d → 61d | Assign Roles → 97 | was named Assign Privileges |
| 99 | Create Protection Elements | 2004-11-19 → 2004-11-23 (+4d) | 2004-11-23 → 2004-11-24 (+1d) | 3d → 2d | 71d → 61d |  |  |
| 103 | Assign Protection Elements to Groups | 2004-11-24 → 2004-12-03 (+9d) | 2004-11-26 → 2004-12-06 (+10d) | 3d → 2d | 71d → 61d | 99 → 102 | was named Assign Protection Elements |
| 106 | Web Interface |  | 2004-11-30 → 2004-12-10 (+10d) | 12d → 20d | 67d → 55d |  |  |
| 107 | Validation | 2004-12-01 → 2004-12-13 (+12d) | 2004-12-02 → 2004-12-20 (+18d) | 2d → 6d | 67d → 55d |  |  |
| 114 | User Guide |  | 2005-01-20 → 2005-01-13 (-7d) | 10d → 5d | 32d → 37d |  | resources Brian → Brian; Eric |

## Version 8 (saved 2004-11-04)

Note of the change: Updated by Kalpesh

Last finish stays 2005-03-07. Complete tasks 0 → 20.

Added:

| ID | Task | Duration | Start | Finish | Constraint | Resources |
| --- | --- | --- | --- | --- | --- | --- |
| 19 | Develop Architecture Prototype | 3d | 2004-10-25 A | 2004-10-27 A | start no earlier than 2004-10-25 |  |
| 23 | Phase Review | 1d? | 2004-09-27 | 2004-09-27 |  | Eric; Kalpesh |
| 39 | Data Model Documentation with Examples | 1d | 2004-11-08 | 2004-11-08 | start no earlier than 2004-11-08 | Vinay |

Removed: 88 Use Case Working Group Review

Changed:

| ID | Task | Start | Finish | Duration | Complete | Total float | Predecessors | Other |
| --- | --- | --- | --- | --- | --- | --- | --- | --- |
| 1 | **Security Module (Release One)** | 2004-08-02 A |  |  | 0% → 29% |  |  |  |
| 2 | **Inception** | 2004-08-02 A | 2004-09-22 A |  | 0% → 100% | 118d → none |  |  |
| 3 | Phase I Evaluation | 2004-08-02 A | 2004-08-10 A |  | 0% → 100% | 149d → none |  |  |
| 4 | Interview NCICB Team Leads | 2004-08-09 A | 2004-08-24 A |  | 0% → 100% | 123d → none |  |  |
| 5 | Scope and Vision Document | 2004-08-30 A | 2004-09-10 A |  | 0% → 100% | 126d → none |  |  |
| 6 | Supplentary Specifications | 2004-09-01 A | 2004-09-03 A |  | 0% → 100% | 118d → none |  |  |
| 7 | Fuctional Specifications | 2004-09-06 A | 2004-09-10 A |  | 0% → 100% | 118d → none |  |  |
| 8 | Use Case Model | 2004-09-13 A | 2004-09-17 A |  | 0% → 100% | 118d → none |  |  |
| 9 | Identify Risk List | 2004-09-20 A | 2004-09-22 A |  | 0% → 100% | 118d → none |  |  |
| 10 | **Elaboration** | 2004-09-27 A | 2004-10-26 → 2004-10-27 (+1d) | 22d? → 23d? | 0% → 78% | 94d → 93d |  |  |
| 11 | **Iteration I** | 2004-09-27 A |  |  | 0% → 92% |  |  |  |
| 12 | Level 1 - 2 Use Cases | 2004-09-27 A | 2004-10-01 A |  | 0% → 100% | 111d → none |  |  |
| 13 | Risk List Priority | 2004-09-27 A | 2004-09-29 A |  | 0% → 100% | 113d → none |  |  |
| 14 | Detailed Iteration Release Plan | 2004-09-27 A |  |  | 0% → 95% |  |  |  |
| 15 | **Finalize Requirements** | 2004-10-01 A |  |  | 0% → 50% |  |  |  |
| 17 | User Working Group Review | 2004-10-13 A | 2004-10-13 A |  | 0% → 100% | 103d → none |  | resources Kalpesh → Vinay |
| 18 | **Iteration II** | 2004-10-05 A | 2004-10-26 → 2004-10-27 (+1d) | 16d? → 17d? | 0% → 68% | 94d → 93d |  |  |
| 20 | Software Architecture Document | 2004-10-05 A |  |  | 0% → 70% |  |  | resources Vinay; Kunal → Vinay; Kunal; Eric |
| 24 | **Construction** | 2004-10-18 A |  |  | 0% → 12% |  |  |  |
| 25 | **Iteration I** | 2004-10-26 A |  |  | 0% → 44% | 69d → 76d |  |  |
| 27 | **Authentication** | 2004-10-27 A |  |  | 0% → 45% | 68d → 76d |  |  |
| 28 | **Design** | 2004-10-27 A |  |  | 0% → 63% | 82d → 90d |  |  |
| 29 | **Documentation** | 2004-10-27 A |  |  | 0% → 63% | 82d → 90d |  |  |
| 30 | Level 3 - 4 Use Cases | 2004-10-27 A |  |  | 0% → 50% | 90d → 93.5d |  |  |
| 31 | Use Case Model | 2004-10-27 A | 2004-10-27 A |  | 0% → 100% | 90d → none |  |  |
| 32 | Working Group Use Case Review | 2004-10-28 A | 2004-10-28 A |  | 0% → 100% | 90d → none |  |  |
| 34 | UML Class Diagram | 2004-11-01 A | 2004-11-01 A |  | 0% → 100% | 90d → none |  |  |
| 36 | Design Review | 2004-11-01 A | 2004-11-01 A |  | 0% → 100% | 79d → none |  |  |
| 37 | **Implementation** | 2004-11-01 A |  |  | 0% → 49% | 65d → 80d |  |  |
| 38 | Data Model Enhancement | 2004-11-01 A | 2004-11-05 A |  | 0% → 100% | 65d → none |  |  |
| 40 | **JAAS Authentication Modules** | 2004-11-02 A |  |  | 0% → 35% |  |  |  |
| 42 | RBDMS | 2004-11-08 A | 2004-11-12 A |  | 0% → 100% | 76d → none |  |  |
| 44 | Code Reviews |  |  | 1d → 0.33d |  | 75d → 76d |  | resources Brian → Brian; Kalpesh; Charles |
| 49 | User Working Group Review (SAD, Design Models) |  |  |  |  |  |  | was named User Working Group Review |
| 83 | **Iteration IV** | 2004-10-18 A |  |  | 0% → 11% |  |  |  |
| 85 | **User Provisioning** | 2004-10-20 A |  |  | 0% → 11% |  |  |  |
| 86 | **Design** | 2004-10-20 A | 2004-11-10 → 2004-11-09 (-1d) | 16d → 15d | 0% → 75% | 83d → 84d |  |  |
| 87 | **Documentation** | 2004-10-20 A | 2004-11-10 → 2004-11-09 (-1d) | 16d → 15d | 0% → 75% | 83d → 84d |  |  |
| 88 | Level 3 - 4 Use Cases | 2004-10-27 A | 2004-10-27 A |  | 0% → 100% | 93d → none |  |  |
| 89 | Use Case Model | 2004-10-20 A | 2004-10-27 A |  | 0% → 100% | 83d → none |  |  |
| 90 | Gather Requirements | 2004-10-28 A | 2004-11-03 A |  | 0% → 100% | 83d → none |  |  |
| 91 | UML Sequence Diagram | 2004-11-05 → 2004-11-04 (-1d) | 2004-11-05 → 2004-11-04 (-1d) |  |  | 83d → 84d | Use Case Working Group Review → 90 |  |
| 92 | UML Class Diagram | 2004-11-08 → 2004-11-05 (-3d) | 2004-11-08 → 2004-11-05 (-3d) |  |  | 83d → 84d |  |  |
| 93 | UML Activity Diagram | 2004-11-09 → 2004-11-08 (-1d) | 2004-11-09 → 2004-11-08 (-1d) |  |  | 83d → 84d |  |  |
| 94 | Design Review | 2004-11-10 → 2004-11-09 (-1d) | 2004-11-10 → 2004-11-09 (-1d) |  |  | 83d → 84d |  |  |

## Version 9 (saved 2004-11-15)

Note of the change: updated dates for user provisioning to reflect vacation and 50% avail for Brian

Last finish stays 2005-03-07.

Added:

| ID | Task | Duration | Start | Finish | Predecessors | Constraint |
| --- | --- | --- | --- | --- | --- | --- |
| 91 | Create DDL for mysql | 1d | 2004-11-10 | 2004-11-10 |  | start no earlier than 2004-11-10 |
| 92 | Generate Hibernate Mappings | 1d | 2004-11-11 | 2004-11-11 | 91 |  |
| 93 | Generate Hibernate Mappings | 1d | 2004-11-12 | 2004-11-12 | 92 |  |

Removed: 91 UML Sequence Diagram; 93 UML Activity Diagram

Changed:

| ID | Task | Start | Finish | Duration | Complete | Total float | Predecessors | Other |
| --- | --- | --- | --- | --- | --- | --- | --- | --- |
| 1 | **Security Module (Release One)** |  |  |  | 29% → 26% |  |  |  |
| 24 | **Construction** |  | 2005-01-27 → 2005-02-16 (+20d) | 74d → 88d | 12% → 10% | 27d → 13d |  |  |
| 83 | **Iteration IV** |  | 2005-01-13 → 2005-02-16 (+34d) | 64d → 88d | 11% → 8% | 37d → 13d |  |  |
| 85 | **User Provisioning** |  | 2005-01-13 → 2005-02-16 (+34d) | 62d → 86d | 11% → 8% | 37d → 13d |  |  |
| 86 | **Design** |  | 2004-11-09 → 2004-11-16 (+7d) | 15d → 20d | 75% → 71% | 84d → 79d |  |  |
| 87 | **Documentation** |  | 2004-11-09 → 2004-11-16 (+7d) | 15d → 20d | 75% → 71% | 84d → 79d |  |  |
| 94 | UML Class Diagram | 2004-11-05 → 2004-11-15 (+10d) | 2004-11-05 → 2004-11-15 (+10d) |  |  | 84d → 79d | UML Sequence Diagram → 93 |  |
| 95 | Design Review | 2004-11-09 → 2004-11-16 (+7d) | 2004-11-09 → 2004-11-16 (+7d) |  |  | 84d → 79d | UML Activity Diagram → 94 | constraint none → finish no earlier than 2004-11-15 |
| 96 | **Implementation** | 2004-11-04 → 2004-11-05 (+1d) | 2004-12-20 → 2005-01-20 (+31d) | 33d → 55d |  | 53d → 29d |  |  |
| 97 | Create Roles | 2004-11-04 → 2004-11-16 (+12d) | 2004-11-10 → 2004-11-22 (+12d) |  |  | 61d → 51d |  | constraint start no earlier than 2004-11-04 → start no earlier than 2004-11-16 |
| 98 | Modify Roles | 2004-11-11 → 2004-11-23 (+12d) | 2004-11-12 → 2004-11-29 (+17d) | 2d → 5d |  | 61d → 51d |  |  |
| 99 | Create Privileges | 2004-11-15 → 2004-11-30 (+15d) | 2004-11-16 → 2004-12-02 (+16d) | 2d → 3d |  | 61d → 51d |  |  |
| 100 | Modify Privileges | 2004-11-17 → 2004-12-03 (+16d) | 2004-11-18 → 2004-12-07 (+19d) | 2d → 3d |  | 61d → 51d |  |  |
| 101 | Assign Privileges to Roles | 2004-11-19 → 2004-12-08 (+19d) | 2004-11-22 → 2004-12-10 (+18d) | 2d → 3d |  | 61d → 51d |  |  |
| 102 | Create Protection Elements | 2004-11-23 → 2004-12-13 (+20d) | 2004-11-24 → 2004-12-14 (+20d) |  |  | 61d → 51d |  |  |
| 103 | Modify Protection Elements | 2004-11-25 → 2004-12-15 (+20d) | 2004-11-26 → 2004-12-16 (+20d) |  |  | 61d → 51d |  |  |
| 104 | Create Protection Group | 2004-11-29 → 2004-12-17 (+18d) | 2004-11-30 → 2004-12-20 (+20d) |  |  | 61d → 51d |  |  |
| 105 | Modify Protection Group | 2004-12-01 → 2004-12-21 (+20d) | 2004-12-02 → 2004-12-22 (+20d) |  |  | 61d → 51d |  |  |
| 106 | Assign Protection Elements to Groups | 2004-12-03 → 2004-12-23 (+20d) | 2004-12-06 → 2004-12-24 (+18d) |  |  | 61d → 51d |  |  |
| 107 | Assign Protection Elements to Users | 2004-12-07 → 2005-01-04 (+28d) | 2004-12-08 → 2005-01-05 (+28d) |  |  | 61d → 41d | 106 → none | constraint none → start no earlier than 2005-01-04 |
| 108 | Assign Protection Group to User Roles | 2004-12-09 → 2005-01-06 (+28d) | 2004-12-10 → 2005-01-07 (+28d) |  |  | 61d → 41d |  |  |
| 109 | Web Interface | 2004-11-15 → 2004-12-06 (+21d) | 2004-12-10 → 2005-01-12 (+33d) | 20d → 28d |  | 55d → 32d |  | constraint start no earlier than 2004-11-15 → finish no earlier than 2005-01-12 |
| 110 | Validation | 2004-12-13 → 2005-01-13 (+31d) | 2004-12-20 → 2005-01-20 (+31d) |  |  | 55d → 32d |  |  |
| 111 | Code Reviews |  | 2004-12-20 → 2005-01-17 (+28d) | 32d → 52d |  | 52d → 29d |  | constraint finish no earlier than 2004-12-20 → finish no earlier than 2005-01-17 |
| 112 | **Unit Testing** | 2004-12-21 → 2005-01-18 (+28d) | 2005-01-05 → 2005-01-25 (+20d) | 12d → 6d |  | 43d → 29d |  |  |
| 113 | Perform Testing | 2004-12-21 → 2005-01-18 (+28d) | 2004-12-23 → 2005-01-20 (+28d) |  |  | 52d → 29d |  |  |
| 114 | Evaluate Results | 2005-01-03 → 2005-01-21 (+18d) | 2005-01-03 → 2005-01-21 (+18d) |  |  | 43d → 29d | none → 113 | constraint start no earlier than 2005-01-03 → none |
| 115 | Integration Testing | 2005-01-04 → 2005-01-24 (+20d) | 2005-01-04 → 2005-01-24 (+20d) |  |  | 43d → 29d |  |  |
| 116 | User Working Group Review | 2005-01-05 → 2005-01-25 (+20d) | 2005-01-05 → 2005-01-25 (+20d) |  |  | 43d → 29d |  |  |
| 117 | User Guide | 2005-01-07 → 2005-02-01 (+25d) | 2005-01-13 → 2005-02-16 (+34d) | 5d → 12d |  | 37d → 13d |  | constraint start no earlier than 2005-01-07 → start no earlier than 2005-02-01 |

## Version 10 (saved 2004-11-18)

Note of the change: Updated with Percent complete

Last finish stays 2005-03-07. Complete tasks 20 → 28.

Changed:

| ID | Task | Start | Finish | Duration | Complete | Total float | Other |
| --- | --- | --- | --- | --- | --- | --- | --- |
| 1 | **Security Module (Release One)** |  |  |  | 26% → 28% |  |  |
| 24 | **Construction** |  |  |  | 10% → 15% |  |  |
| 25 | **Iteration I** |  |  |  | 44% → 74% |  |  |
| 27 | **Authentication** |  |  |  | 45% → 76% |  |  |
| 37 | **Implementation** |  |  |  | 49% → 80% |  |  |
| 39 | Data Model Documentation with Examples | 2004-11-08 A | 2004-11-08 A |  | 0% → 100% | 85d → none |  |
| 40 | **JAAS Authentication Modules** |  |  |  | 35% → 72% | 76d → 80d |  |
| 41 | LDAP | 2004-11-02 A | 2004-11-08 A |  | 0% → 100% | 80.67d → none |  |
| 44 | Code Reviews | 2004-11-15 A | 2004-11-15 A |  | 0% → 100% | 76d → none |  |
| 45 | **Unit Testing** | 2004-11-16 A |  |  | 0% → 75% |  |  |
| 46 | Perform Testing | 2004-11-16 A | 2004-11-16 A |  | 0% → 100% | 76d → none | resources Eric → Kunal |
| 47 | Evaluate Results | 2004-11-17 A | 2004-11-17 A |  | 0% → 100% | 76d → none | resources Eric; Vinay → Eric; Vinay; Kunal |
| 48 | Integration Testing | 2004-11-18 A | 2004-11-18 A |  | 0% → 100% | 76d → none |  |
| 83 | **Iteration IV** |  |  |  | 8% → 9% |  |  |
| 85 | **User Provisioning** |  |  |  | 8% → 9% |  |  |
| 86 | **Design** |  | 2004-11-16 → 2004-11-25 (+9d) | 20d → 27d | 71% → 82% | 79d → 72d |  |
| 87 | **Documentation** |  | 2004-11-16 → 2004-11-25 (+9d) | 20d → 27d | 71% → 82% | 79d → 72d |  |
| 91 | Create DDL for mysql | 2004-11-10 A | 2004-11-10 A |  | 0% → 100% | 79d → none |  |
| 92 | Generate Hibernate Mappings | 2004-11-11 → 2004-11-22 A (+11d) | 2004-11-11 → 2004-11-22 A (+11d) |  | 0% → 100% | 79d → none |  |
| 93 | Generate Hibernate Mappings | 2004-11-12 → 2004-11-23 (+11d) | 2004-11-12 → 2004-11-23 (+11d) |  |  | 79d → 72d |  |
| 94 | UML Class Diagram | 2004-11-15 → 2004-11-24 (+9d) | 2004-11-15 → 2004-11-24 (+9d) |  |  | 79d → 72d |  |
| 95 | Design Review | 2004-11-16 → 2004-11-25 (+9d) | 2004-11-16 → 2004-11-25 (+9d) |  |  | 79d → 72d |  |
| 97 | Create Roles | 2004-11-16 → 2004-11-29 (+13d) | 2004-11-22 → 2004-12-03 (+11d) |  |  | 51d → 42d | constraint start no earlier than 2004-11-16 → start no earlier than 2004-11-29 |
| 98 | Modify Roles | 2004-11-23 → 2004-12-06 (+13d) | 2004-11-29 → 2004-12-10 (+11d) |  |  | 51d → 42d |  |
| 99 | Create Privileges | 2004-11-30 → 2004-12-13 (+13d) | 2004-12-02 → 2004-12-15 (+13d) |  |  | 51d → 42d |  |
| 100 | Modify Privileges | 2004-12-03 → 2004-12-16 (+13d) | 2004-12-07 → 2004-12-20 (+13d) |  |  | 51d → 42d |  |
| 101 | Assign Privileges to Roles | 2004-12-08 → 2004-12-21 (+13d) | 2004-12-10 → 2004-12-23 (+13d) |  |  | 51d → 42d |  |
| 102 | Create Protection Elements | 2004-12-13 → 2004-12-24 (+11d) | 2004-12-14 → 2004-12-27 (+13d) |  |  | 51d → 42d |  |
| 103 | Modify Protection Elements | 2004-12-15 → 2004-12-28 (+13d) | 2004-12-16 → 2004-12-29 (+13d) |  |  | 51d → 42d |  |
| 104 | Create Protection Group | 2004-12-17 → 2004-12-30 (+13d) | 2004-12-20 → 2004-12-31 (+11d) |  |  | 51d → 42d |  |
| 105 | Modify Protection Group | 2004-12-21 → 2005-01-03 (+13d) | 2004-12-22 → 2005-01-04 (+13d) |  |  | 51d → 42d |  |
| 106 | Assign Protection Elements to Groups | 2004-12-23 → 2005-01-05 (+13d) | 2004-12-24 → 2005-01-06 (+13d) |  |  | 51d → 42d |  |

## Version 11 (saved 2004-11-19)

Note of the change: Updated by Brian

Last finish stays 2005-03-07.

Added:

| ID | Task | Duration | Start | Finish | Predecessors | Resources |
| --- | --- | --- | --- | --- | --- | --- |
| 70 | Review Integration Test Plan | 1d | 2005-01-18 | 2005-01-18 | 69 | Team |

Changed:

| ID | Task | Start | Finish | Duration | Complete | Total float | Predecessors | Other |
| --- | --- | --- | --- | --- | --- | --- | --- | --- |
| 1 | **Security Module (Release One)** |  |  |  | 28% → 30% |  |  |  |
| 24 | **Construction** |  |  |  | 15% → 16% |  |  |  |
| 50 | **Iteration II** |  | 2005-01-20 → 2005-01-21 (+1d) | 38d → 39d |  | 27d → 26d |  |  |
| 52 | **Authorization** |  | 2005-01-20 → 2005-01-21 (+1d) | 37d → 38d |  | 27d → 26d |  |  |
| 68 | **Unit Testing** |  | 2005-01-20 → 2005-01-21 (+1d) | 5d → 6d |  | 27d → 26d |  |  |
| 71 | Evaluate Results | 2005-01-18 → 2005-01-19 (+1d) | 2005-01-18 → 2005-01-19 (+1d) |  |  | 27d → 26d | 69 → 70 |  |
| 72 | Integration Testing | 2005-01-19 → 2005-01-20 (+1d) | 2005-01-19 → 2005-01-20 (+1d) |  |  | 27d → 26d |  |  |
| 73 | User Working Group Review | 2005-01-20 → 2005-01-21 (+1d) | 2005-01-20 → 2005-01-21 (+1d) |  |  | 27d → 26d |  |  |
| 74 | **Iteration III** |  | 2005-01-27 → 2005-01-28 (+1d) | 28d → 29d |  | 27d → 26d |  |  |
| 76 | **Prototype (Reference Implementation)** |  | 2005-01-27 → 2005-01-28 (+1d) | 27d → 28d |  | 27d → 26d |  |  |
| 77 | **Implementation** |  | 2005-01-27 → 2005-01-28 (+1d) | 27d → 28d |  | 27d → 26d |  |  |
| 78 | **Demo Application** |  | 2005-01-27 → 2005-01-28 (+1d) | 27d → 28d |  | 27d → 26d |  |  |
| 81 | Integrate Authorization | 2005-01-21 → 2005-01-24 (+3d) | 2005-01-27 → 2005-01-28 (+1d) |  |  | 27d → 26d |  |  |
| 84 | **Iteration IV** |  |  |  | 9% → 10% |  |  |  |
| 86 | **User Provisioning** |  |  |  | 9% → 10% |  |  |  |
| 96 | Design Review |  |  |  |  |  |  | resources Vinay → Eric |
| 97 | **Implementation** | 2004-11-05 → 2004-11-29 (+24d) |  | 55d → 39d |  | 29d → 31d |  |  |
| 112 | Code Reviews | 2004-11-05 → 2004-12-06 (+31d) | 2005-01-17 → 2005-01-20 (+3d) | 52d → 34d |  | 29d → 26d |  | constraint finish no earlier than 2005-01-17 → start no earlier than 2004-12-06 |
| 113 | **Unit Testing** | 2005-01-18 → 2005-01-21 (+3d) | 2005-01-25 → 2005-01-28 (+3d) |  |  | 29d → 26d |  |  |
| 114 | Perform Testing | 2005-01-18 → 2005-01-21 (+3d) | 2005-01-20 → 2005-01-25 (+5d) |  |  | 29d → 26d |  |  |
| 115 | Evaluate Results | 2005-01-21 → 2005-01-26 (+5d) | 2005-01-21 → 2005-01-26 (+5d) |  |  | 29d → 26d |  |  |
| 116 | Integration Testing | 2005-01-24 → 2005-01-27 (+3d) | 2005-01-24 → 2005-01-27 (+3d) |  |  | 29d → 26d |  |  |
| 117 | User Working Group Review | 2005-01-25 → 2005-01-28 (+3d) | 2005-01-25 → 2005-01-28 (+3d) |  |  | 29d → 26d |  |  |

## Version 12 (saved 2004-12-02)

Note of the change: status meeting result

Last finish stays 2005-03-07. Complete tasks 28 → 45.

Added:

| ID | Task | Duration | Start | Finish | Predecessors | Constraint | Resources |
| --- | --- | --- | --- | --- | --- | --- | --- |
| 67 | **develop run time API** | 15d? | 2004-12-02 | 2004-12-22 | 66 |  | Brian; Vinay |
| 68 | Implement AuthorizationManager Interface | 15d | 2004-12-02 | 2004-12-22 |  | finish no earlier than 2004-12-22 | Brian; Vinay |
| 69 | Code Review | 1d? | 2004-12-02 | 2004-12-02 |  |  | Eric |
| 101 | Create Hibernate Mappings | 4d | 2004-12-03 | 2004-12-08 |  | start no earlier than 2004-12-03 | Brian; Vinay |
| 115 | Design HTML/JSP Pages | 20d | 2004-12-03 | 2004-12-30 |  | start no earlier than 2004-12-03 | Kunal; Eric |
| 116 | Develop Struts Actions, Forms, Config | 20d | 2004-12-06 | 2004-12-31 |  | finish no earlier than 2004-12-31 | Kunal; Eric |
| 118 | Junit Test Cases (Ongoing Task) | 17d | 2004-12-14 | 2005-01-05 |  | finish no earlier than 2005-01-05 | Kunal; Eric |

Changed:

| ID | Task | Start | Finish | Duration | Complete | Total float | Predecessors | Other |
| --- | --- | --- | --- | --- | --- | --- | --- | --- |
| 1 | **Security Module (Release One)** |  |  |  | 30% → 35% |  |  |  |
| 10 | **Elaboration** |  |  |  | 78% → 81% |  |  |  |
| 18 | **Iteration II** |  |  |  | 68% → 73% |  |  |  |
| 21 | Architecture Review | 2004-10-26 A | 2004-10-26 A |  | 0% → 100% | 94d → none |  |  |
| 24 | **Construction** |  |  | 88d → 88d? | 16% → 24% |  |  |  |
| 25 | **Iteration I** |  |  |  | 74% → 84% |  |  |  |
| 27 | **Authentication** |  |  |  | 76% → 87% |  |  |  |
| 28 | **Design** |  | 2004-11-01 A |  | 63% → 100% | 90d → none |  |  |
| 29 | **Documentation** |  | 2004-11-01 A |  | 63% → 100% | 90d → none |  |  |
| 30 | Level 3 - 4 Use Cases |  | 2004-10-27 A |  | 50% → 100% | 93.5d → none |  |  |
| 33 | UML Sequence Diagram | 2004-10-29 A | 2004-10-29 A |  | 0% → 100% | 91d → none |  |  |
| 35 | UML Activity Diagram | 2004-10-29 A | 2004-10-29 A |  | 0% → 100% | 91d → none |  |  |
| 43 | Junit Test Development |  |  |  |  |  |  | resources Eric → Kunal |
| 45 | **Unit Testing** |  | 2004-11-19 A |  | 75% → 100% | 76d → none |  |  |
| 49 | User Working Group Review (SAD, Design Models) | 2004-11-19 A | 2004-11-19 A |  | 0% → 100% | 76d → none |  |  |
| 50 | **Iteration II** | 2004-11-30 → 2004-11-23 A (-7d) |  | 39d → 44d? | 0% → 30% |  |  |  |
| 52 | **Authorization** | 2004-12-01 → 2004-11-23 A (-8d) |  | 38d → 44d? | 0% → 30% |  |  |  |
| 53 | **Design** | 2004-12-01 A | 2004-12-08 A |  | 0% → 100% | 58d → none |  |  |
| 54 | **Documentation** | 2004-12-01 A | 2004-12-08 A |  | 0% → 100% | 58d → none |  |  |
| 55 | Level 3 - 4 Use Cases | 2004-12-01 A | 2004-12-01 A |  | 0% → 100% | 63d → none |  |  |
| 56 | Use Case Model | 2004-12-01 A | 2004-12-01 A |  | 0% → 100% | 60d → none |  |  |
| 57 | User Working Group Review | 2004-12-02 A | 2004-12-02 A |  | 0% → 100% | 60d → none |  |  |
| 58 | UML Sequence Diagram | 2004-12-03 A | 2004-12-03 A |  | 0% → 100% | 60d → none |  |  |
| 59 | UML Class Diagram | 2004-12-06 A | 2004-12-06 A |  | 0% → 100% | 60d → none |  |  |
| 60 | UML Activity Diagram | 2004-12-06 A | 2004-12-06 A |  | 0% → 100% | 59d → none |  |  |
| 61 | Design Review | 2004-12-07 A | 2004-12-07 A |  | 0% → 100% | 59d → none |  |  |
| 62 | UML Model for EVS | 2004-12-07 A | 2004-12-08 A |  | 0% → 100% | 58d → none |  |  |
| 63 | **Implementation** | 2004-12-09 → 2004-11-23 A (-16d) | 2005-01-13 → 2004-12-22 (-22d) | 26d → 22d? | 0% → 19% | 32d → 48d |  |  |
| 65 | **Authorization API** | 2004-12-23 → 2004-11-23 A (-30d) | 2005-01-13 → 2004-12-22 (-22d) | 16d → 22d? | 0% → 25% | 32d → 48d |  |  |
| 66 | Enhance Phase I Object Model | 2004-12-23 → 2004-11-23 A (-30d) | 2005-01-12 → 2004-12-01 A (-42d) | 15d → 7d | 0% → 100% | 32d → none |  |  |
| 70 | Junit Test Development | 2005-01-13 → 2004-12-16 (-28d) | 2005-01-13 → 2004-12-22 (-22d) | 1d → 4.5d |  | 32d → 48d | 66 → none | constraint finish no earlier than 2005-01-13 → finish no earlier than 2004-12-22; resources Eric → Brian; Vinay |
| 87 | **Iteration IV** |  |  |  | 10% → 14% |  |  |  |
| 89 | **User Provisioning** |  |  |  | 10% → 14% |  |  |  |
| 90 | **Design** |  | 2004-11-25 A |  | 82% → 100% | 72d → none |  |  |
| 91 | **Documentation** |  | 2004-11-25 A |  | 82% → 100% | 72d → none |  |  |
| 97 | Generate Hibernate Mappings | 2004-11-23 A | 2004-11-23 A |  | 0% → 100% | 72d → none |  |  |
| 98 | UML Class Diagram | 2004-11-24 A | 2004-11-24 A |  | 0% → 100% | 72d → none |  |  |
| 99 | Design Review | 2004-11-25 A | 2004-11-25 A |  | 0% → 100% | 72d → none |  |  |
| 100 | **Implementation** | 2004-11-29 A | 2005-01-20 → 2005-01-05 (-15d) | 39d → 28d | 0% → 2% | 31d → 43d |  | resources Brian → Brian; Vinay |
| 102 | Create Roles | 2004-11-29 A | 2004-12-03 → 2004-12-10 (+7d) | 5d → 3.75d | 0% → 67% | 42d → 49.75d | none → 101 | resources Brian → Brian; Vinay |
| 103 | Modify Roles | 2004-12-06 → 2004-12-10 (+4d) | 2004-12-10 → 2004-12-14 (+4d) | 5d → 2.5d |  | 42d → 49.75d |  | resources Brian → Brian; Vinay |
| 104 | Create Privileges | 2004-12-13 → 2004-12-14 (+1d) | 2004-12-15 → 2004-12-16 (+1d) | 3d → 1.5d |  | 42d → 49.75d |  | resources Brian → Brian; Vinay |
| 105 | Modify Privileges |  | 2004-12-20 → 2004-12-17 (-3d) | 3d → 1.5d |  | 42d → 49.75d |  | resources Brian → Brian; Vinay |
| 106 | Assign Privileges to Roles | 2004-12-21 → 2004-12-17 (-4d) | 2004-12-23 → 2004-12-21 (-2d) | 3d → 1.5d |  | 42d → 49.75d |  | resources Brian → Brian; Vinay |
| 107 | Create Protection Elements | 2004-12-24 → 2004-12-21 (-3d) | 2004-12-27 → 2004-12-22 (-5d) | 2d → 1d |  | 42d → 49.75d |  | resources Brian → Brian; Vinay |
| 108 | Modify Protection Elements | 2004-12-28 → 2004-12-22 (-6d) | 2004-12-29 → 2004-12-23 (-6d) | 2d → 1d |  | 42d → 49.75d |  | resources Brian → Brian; Vinay |
| 109 | Create Protection Group | 2004-12-30 → 2004-12-23 (-7d) | 2004-12-31 → 2004-12-24 (-7d) | 2d → 1d |  | 42d → 49.75d |  | resources Brian → Brian; Vinay |
| 110 | Modify Protection Group | 2005-01-03 → 2004-12-24 (-10d) | 2005-01-04 → 2004-12-27 (-8d) | 2d → 1d |  | 42d → 49.75d |  | resources Brian → Brian; Vinay |
| 111 | Assign Protection Elements to Groups | 2005-01-05 → 2004-12-27 (-9d) | 2005-01-06 → 2004-12-28 (-9d) | 2d → 1d |  | 42d → 49.75d |  | resources Brian → Brian; Vinay |
| 112 | Assign Protection Elements to Users |  | 2005-01-05 → 2005-01-04 (-1d) | 2d → 1d |  | 41d → 43d |  | resources Brian → Brian; Vinay |
| 113 | Assign Protection Group to User Roles | 2005-01-06 → 2005-01-05 (-1d) | 2005-01-07 → 2005-01-05 (-2d) | 2d → 1d |  | 41d → 43d |  | resources Brian → Brian; Vinay |
| 114 | **Struts Interface** | 2004-12-06 → 2004-12-03 (-3d) | 2005-01-12 → 2005-01-05 (-7d) | 28d → 24d |  | 32d → 43d |  | was named Web Interface; constraint finish no earlier than 2005-01-12 → none; resources Eric → Kunal; Eric |
| 117 | Validation | 2005-01-13 → 2005-01-03 (-10d) | 2005-01-20 → 2005-01-05 (-15d) | 6d → 3d |  | 32d → 43d | 114 → 116 | resources Brian → Eric; Kunal |
| 119 | Code Reviews (Onging Task) |  | 2005-01-20 → 2005-01-05 (-15d) | 34d → 23d |  | 26d → 37d |  | was named Code Reviews; constraint start no earlier than 2004-12-06 → finish no earlier than 2005-01-05; resources Vinay → Vinay; Brian |
| 120 | **Unit Testing** | 2005-01-21 → 2005-01-06 (-15d) | 2005-01-28 → 2005-01-13 (-15d) |  |  | 26d → 37d |  |  |
| 121 | Perform Testing | 2005-01-21 → 2005-01-06 (-15d) | 2005-01-25 → 2005-01-10 (-15d) |  |  | 26d → 37d |  |  |
| 122 | Evaluate Results | 2005-01-26 → 2005-01-11 (-15d) | 2005-01-26 → 2005-01-11 (-15d) |  |  | 26d → 37d |  |  |
| 123 | Integration Testing | 2005-01-27 → 2005-01-12 (-15d) | 2005-01-27 → 2005-01-12 (-15d) |  |  | 26d → 37d |  |  |
| 124 | User Working Group Review | 2005-01-28 → 2005-01-13 (-15d) | 2005-01-28 → 2005-01-13 (-15d) |  |  | 26d → 37d |  |  |
